# ABP Planificacion

Schedule from MS Project, 2018-09-10 to 2019-05-06, status date 2018-12-06, costs in €, A marks actual dates.

## Calendars

- Estándar: Mon-Fri 09:00-13:00, 15:00-19:00; Sat-Sun off.

## Resources

| Resource | Rate | Cost per use |
| --- | --- | --- |
| Débora Galdeano González | 22 | 22 |
| Marines Ánton Castelló | 18 | 18 |
| María Sánchez Marqués | 20 | 20 |
| Jose Ramon Barea Cecilia | 20 | 20 |
| David Ramón Sevilla | 18 | 18 |
| Jose Vicente Anton Coy | 18 | 18 |
| Todos |  |  |

## Schedule

| ID | WBS | Task | Type | Duration | Start | Finish | Predecessors | Complete | Remaining | Baseline start | Baseline finish | Baseline duration | Total slack | Free slack | Constraint | Resources | Work | Actual work | Cost | Baseline cost | Actual cost | Horas Reales |
| --- | --- | --- | --- | --- | --- | --- | --- | --- | --- | --- | --- | --- | --- | --- | --- | --- | --- | --- | --- | --- | --- | --- |
| 1 | 1 | **Hito 0** |  | 22.2d | 2018-09-10 A | 2018-10-10 A |  | 100% |  | 2018-09-10 | 2018-10-10 | 22.2d |  |  |  |  |  |  |  |  |  |  |
| 2 | 1.1 | **Iteracion 1** |  | 16.2d | 2018-09-10 A | 2018-10-02 A |  | 100% |  | 2018-09-10 | 2018-10-02 | 16.2d |  |  |  |  |  |  |  |  |  |  |
| 3 | 1.1.1 | [PM]Rellenar documento de Concepto del proyecto |  | 9.6h | 2018-09-10 A | 2018-09-11 A |  | 100% |  | 2018-09-10 | 2018-09-11 | 9.6h |  |  | start no earlier than 2018-09-10 |  |  |  |  |  |  |  |
| 4 | 1.1.2 | [PM]Rellenar Version inicial del documento Especificacion |  | 9.6h | 2018-10-01 A | 2018-10-02 A |  | 100% |  | 2018-10-01 | 2018-10-02 | 9.6h |  |  |  |  |  |  |  |  |  |  |
| 5 | 1.2 | **Iteracion 2** |  | 7.2d | 2018-10-01 A | 2018-10-10 A |  | 100% |  | 2018-10-01 | 2018-10-10 | 7.2d |  |  |  |  |  |  |  |  |  |  |
| 6 | 1.2.1 | [PM]Completar y Revisar documento Especificacion |  | 9.6h | 2018-10-01 A | 2018-10-02 A |  | 100% |  | 2018-10-01 | 2018-10-02 | 9.6h |  |  |  |  |  |  |  |  |  |  |
| 7 | 1.2.2 | [PM]Crear WBS del proyecto project |  | 28.8h | 2018-10-01 A | 2018-10-04 A |  | 100% |  | 2018-10-01 | 2018-10-04 | 28.8h |  |  |  |  |  |  |  |  |  |  |
| 8 | 1.2.3 | [PM]Crear plan general (tareas y precedencias basicas) en project |  | 28.8h | 2018-10-01 A | 2018-10-04 A |  | 100% |  | 2018-10-01 | 2018-10-04 | 28.8h |  |  |  |  |  |  |  |  |  |  |
| 9 | 1.2.4 | [PM]Elaborar el Presupuesto(hoja de calculo) |  | 57.6h | 2018-10-01 A | 2018-10-10 A |  | 100% |  | 2018-10-01 | 2018-10-10 | 57.6h |  |  |  |  |  |  |  |  |  |  |
| 10 | 2 | Documento de Especificaciones realizado | milestone | 0d | 2018-10-10 A | 2018-10-10 A | 1 | 100% |  | 2018-10-10 | 2018-10-10 | 0d |  |  | start no earlier than 2018-10-10 |  |  |  |  |  |  |  |
| 11 | 3 | **Hito 1** |  | 60d | 2018-10-01 A | 2018-12-21 |  | 57% | 25.63d | 2018-10-01 | 2018-12-17 | 55.5d | 96d | 0d |  |  | 621.19h | 477.85h | 12,978.37 | 12,290.2 | 10,050.35 |  |
| 12 | 3.1 | **Iteracion 3** |  | 10d | 2018-10-11 A | 2018-10-24 |  | 55% | 4.48d | 2018-10-11 | 2018-10-24 | 10d | 0d |  | start no earlier than 2018-10-11 |  | 100.51h | 54.67h | 2,063.68 | 2,063.68 | 1,189.96 |  |
| 13 | 3.1.1 | [V1]Documento de diseño de mecánicas de los NPCs |  | 15h | 2018-10-11 A | 2018-10-12 A |  | 100% |  | 2018-10-11 | 2018-10-12 | 15h |  |  | must finish on 2018-10-24 | David Ramón Sevilla [20%]; Débora Galdeano González [12%]; Jose Vicente Anton Coy [20%]; Marines Ánton Castelló [20%] | 10.8h | 10.8h | 215.04 | 215.04 | 215.04 | 14 horas |
| 14 | 3.1.2 | [v1] Documento de diseño de toma de decision: espacio y metodos |  | 32h | 2018-10-19 | 2018-10-24 | 13 |  |  | 2018-10-19 | 2018-10-24 | 32h | 0d |  | must finish on 2018-10-24 | David Ramón Sevilla [15%]; Jose Vicente Anton Coy [20%]; Marines Ánton Castelló [20%]; Débora Galdeano González [5%] | 19.2h |  | 363 | 363 |  |  |
| 15 | 3.1.3 | [V1]Documento de diseño técnico del motor de IA |  | 37h | 2018-10-18 | 2018-10-24 | 14 |  |  | 2018-10-18 | 2018-10-24 | 37h | -4.62d | 0d | must finish on 2018-10-24 | David Ramón Sevilla [20%]; Débora Galdeano González [12%]; Jose Vicente Anton Coy [20%]; Marines Ánton Castelló [20%] | 26.64h |  | 510.72 | 510.72 |  |  |
| 16 | 3.1.4 | **[V2]Diseño e implementación b.objetos (1/10)** |  | 0.44d | 2018-10-11 A | 2018-10-11 A |  | 100% |  | 2018-10-11 | 2018-10-11 | 0.44d |  |  |  | Jose Ramon Barea Cecilia [50%]; María Sánchez Marqués [50%] | 3.5h | 3.5h | 90 | 90 | 90 | 6 horas |
| 17 | 3.1.4.1 | Investigacion |  | 3.5h | 2018-10-11 A | 2018-10-11 A |  | 100% |  | 2018-10-11 | 2018-10-11 | 3.5h |  |  |  |  |  |  |  |  |  |  |
| 18 | 3.1.4.2 | Diseño |  | 3.5h | 2018-10-11 A | 2018-10-11 A |  | 100% |  | 2018-10-11 | 2018-10-11 | 3.5h |  |  |  |  |  |  |  |  |  |  |
| 19 | 3.1.5 | **[TDS]Realizar sonidos para el juego (1/7)** |  | 0.36d | 2018-10-11 A | 2018-10-11 A |  | 100% |  | 2018-10-11 | 2018-10-11 | 0.36d |  |  |  |  | 10.25h | 10.25h | 289.08 | 289.08 | 289.08 | 14 horas |
| 20 | 3.1.5.1 | Síntesis |  | 2.85h | 2018-10-11 A | 2018-10-11 A |  | 100% |  | 2018-10-11 | 2018-10-11 | 2.85h |  |  |  | David Ramón Sevilla [15%]; Jose Ramon Barea Cecilia [15%]; Débora Galdeano González [15%]; María Sánchez Marqués [15%] | 1.71h | 1.71h | 46.2 | 46.2 | 46.2 |  |
| 21 | 3.1.5.2 | Grabaciones propias |  | 2.85h | 2018-10-11 A | 2018-10-11 A |  | 100% |  | 2018-10-11 | 2018-10-11 | 2.85h |  |  |  | David Ramón Sevilla [15%]; Jose Ramon Barea Cecilia [15%]; Débora Galdeano González [15%]; María Sánchez Marqués [15%] | 1.71h | 1.71h | 46.2 | 46.2 | 46.2 |  |
| 22 | 3.1.5.3 | Sonidos externos |  | 2.85h | 2018-10-11 A | 2018-10-11 A |  | 100% |  | 2018-10-11 | 2018-10-11 | 2.85h |  |  |  | David Ramón Sevilla [15%]; Jose Ramon Barea Cecilia [15%]; Débora Galdeano González [15%]; María Sánchez Marqués [15%] | 1.71h | 1.71h | 46.2 | 46.2 | 46.2 |  |
| 23 | 3.1.5.4 | Música |  | 2.85h | 2018-10-11 A | 2018-10-11 A |  | 100% |  | 2018-10-11 | 2018-10-11 | 2.85h |  |  |  | David Ramón Sevilla [15%]; Jose Ramon Barea Cecilia [15%]; Débora Galdeano González [15%]; María Sánchez Marqués [15%] | 1.71h | 1.71h | 46.2 | 46.2 | 46.2 |  |
| 24 | 3.1.5.5 | Cue Sheet |  | 1.42h | 2018-10-11 A | 2018-10-11 A |  | 100% |  | 2018-10-11 | 2018-10-11 | 1.42h |  |  |  | David Ramón Sevilla [15%]; Jose Ramon Barea Cecilia [15%]; Débora Galdeano González [15%]; María Sánchez Marqués [15%] | 0.85h | 0.85h | 29.04 | 29.04 | 29.04 |  |
| 25 | 3.1.5.6 | Hoja de metadatos |  | 1.42h | 2018-10-11 A | 2018-10-11 A |  | 100% |  | 2018-10-11 | 2018-10-11 | 1.42h |  |  |  | David Ramón Sevilla [15%]; Jose Ramon Barea Cecilia [15%]; Débora Galdeano González [15%]; María Sánchez Marqués [15%] | 0.85h | 0.85h | 29.04 | 29.04 | 29.04 |  |
| 26 | 3.1.5.7 | Integración del motor de audio en el juego con prueba de concepto |  | 2.85h | 2018-10-11 A | 2018-10-11 A |  | 100% |  | 2018-10-11 | 2018-10-11 | 2.85h |  |  |  | David Ramón Sevilla [15%]; Jose Ramon Barea Cecilia [15%]; Débora Galdeano González [15%]; María Sánchez Marqués [15%] | 1.71h | 1.71h | 46.2 | 46.2 | 46.2 |  |
| 27 | 3.1.6 | [RV]Boceto de los personajes (1/2) |  | 15h | 2018-10-11 A | 2018-10-12 A |  | 100% |  | 2018-10-11 | 2018-10-12 | 15h |  |  | must finish on 2018-10-24 | Débora Galdeano González [20%] | 3h | 3h | 70.4 | 70.4 | 70.4 | 5 horas |
| 28 | 3.1.7 | [PD]Vídeo con animación del logo de la empresa (1/2) |  | 30h | 2018-10-11 A | 2018-10-16 A |  | 100% |  | 2018-10-11 | 2018-10-16 | 30h |  |  | must finish on 2018-10-24 | Jose Ramon Barea Cecilia [30%]; Jose Vicente Anton Coy [20%]; Marines Ánton Castelló [20%]; David Ramón Sevilla [20%] | 27h | 27h | 520.8 | 520.8 | 520.8 | 24 horas |
| 29 | 3.1.8 | [PM]Registrar tiempos y % de realización de tareas en Project |  | 1h | 2018-10-24 A | 2018-10-24 A |  | 100% |  | 2018-10-24 | 2018-10-24 | 1h |  |  | must finish on 2018-10-24 | David Ramón Sevilla [2%]; Débora Galdeano González [2%]; Jose Ramon Barea Cecilia [2%]; Jose Vicente Anton Coy [2%]; María Sánchez Marqués [2%]; Marines Ánton Castelló [2%] | 0.12h | 0.12h | 4.64 | 4.64 | 4.64 | 48 minutos |

Notes:
- 13: Falta bocetos o esquemas
- 14: Se mueven a iteraccion 4 por falta de tiempo
- 15: Se mueven a iteraccion 4 por falta de tiempo
- 27: Faltarian los enemigos
- 29: Se han realizado en excel por comodidad, las proximas en toggl

| ID | WBS | Task | Type | Duration | Start | Finish | Predecessors | Complete | Remaining | Baseline start | Baseline finish | Baseline duration | Total slack | Constraint | Deadline | Resources | Work | Actual work | Cost | Baseline cost | Actual cost | Horas Reales | Encargados | Horas realizadas |
| --- | --- | --- | --- | --- | --- | --- | --- | --- | --- | --- | --- | --- | --- | --- | --- | --- | --- | --- | --- | --- | --- | --- | --- | --- |
| 30 | 3.2 | **Iteracion 4** |  | 9.1d | 2018-10-25 A | 2018-11-07 |  | 99% | 0.06d | 2018-10-25 | 2018-11-07 | 9.1d | 0.9d | start no earlier than 2018-10-25 |  |  | 59.92h | 59.02h | 1,344.23 | 1,344.23 | 1,309.43 |  |  |  |
| 31 | 3.2.1 | [v1] Documento de diseño de toma de decision: espacio y metodos (1/2) |  | 4h | 2018-10-25 A | 2018-10-25 A | 13 | 100% |  | 2018-10-25 | 2018-10-25 | 4h |  |  | 2018-11-07 | David Ramón Sevilla [10%]; Jose Vicente Anton Coy [10%]; Marines Ánton Castelló [10%]; Débora Galdeano González [10%] | 1.6h | 1.6h | 38 | 38 | 38 | 32 h | Marines, Debora, David | 4 h |
| 32 | 3.2.2 | [V1]Documento de diseño técnico del motor de IA (1/2) |  | 8h | 2018-10-31 A | 2018-10-31 A | 31 | 100% |  | 2018-10-31 | 2018-10-31 | 8h |  |  | 2018-11-07 | David Ramón Sevilla [10%]; Débora Galdeano González [10%]; Jose Vicente Anton Coy [10%]; Marines Ánton Castelló [10%] | 3.2h | 3.2h | 68.4 | 68.4 | 68.4 | 37 h | Marines, Debora, David | 8 h |
| 33 | 3.2.3 | **[V1]Sistema de toma de decisión con Behaviour Trees (1/2)** |  | 1.88d | 2018-10-29 A | 2018-10-30 A | 15 | 100% |  | 2018-10-29 | 2018-10-30 | 1.88d |  |  | 2018-11-07 | David Ramón Sevilla [10%]; Débora Galdeano González [10%]; Jose Vicente Anton Coy [10%]; Marines Ánton Castelló [10%] | 6h | 6h | 121.6 | 121.6 | 121.6 | 51 h | Debora | 15 h |
| 34 | 3.2.3.1 | Investigacion |  | 10h | 2018-10-29 A | 2018-10-30 A |  | 100% |  | 2018-10-29 | 2018-10-30 | 10h |  | start no earlier than 2018-10-27 | 2018-11-07 |  |  |  |  |  |  | 10 h |  | 10 h |
| 35 | 3.2.3.2 | Diseño |  | 5h | 2018-10-30 A | 2018-10-30 A | 34 | 100% |  | 2018-10-30 | 2018-10-30 | 5h |  |  | 2018-11-07 |  |  |  |  |  |  | 5 h |  | 5 h |
| 36 | 3.2.3.3 | Implementar | milestone | 0h | 2018-10-30 A | 2018-10-30 A | 35 | 100% |  | 2018-10-30 | 2018-10-30 | 0h |  |  | 2018-11-07 |  |  |  |  |  |  | 36 h |  | 0 h |
| 37 | 3.2.4 | [V1]Documento de diseño de mecánicas de los NPCs 2/2 |  | 22h | 2018-10-25 A | 2018-10-29 A |  | 100% |  | 2018-10-25 | 2018-10-29 | 22h |  | finish no later than 2018-11-07 | 2018-11-07 | Débora Galdeano González [10%]; Marines Ánton Castelló [10%]; David Ramón Sevilla [10%]; Jose Vicente Anton Coy [10%] | 8.8h | 8.8h | 174.8 | 174.8 | 174.8 | 22 h | Marines debora david jose vicente | 5 h |
| 38 | 3.2.5 | **[V2]Diseño e implementación b.objetos (2/10)** |  | 0.88d | 2018-10-30 A | 2018-10-30 A |  | 100% |  | 2018-10-30 | 2018-10-30 | 0.88d |  | finish no later than 2018-11-07 | 2018-11-07 | María Sánchez Marqués [10%]; Jose Ramon Barea Cecilia [10%]; David Ramón Sevilla [10%]; Débora Galdeano González [10%]; Jose Vicente Anton Coy [10%]; Marines Ánton Castelló [10%] | 4.2h | 4.2h | 92.8 | 92.8 | 92.8 | 7 h | Jose vicente | 14 h |
| 39 | 3.2.5.1 | Diseño |  | 2h | 2018-10-30 A | 2018-10-30 A |  | 100% |  | 2018-10-30 | 2018-10-30 | 2h |  | start no earlier than 2018-10-30 |  |  |  |  |  |  |  |  |  |  |
| 40 | 3.2.5.2 | Implementacion |  | 5h | 2018-10-30 A | 2018-10-30 A | 39 | 100% |  | 2018-10-30 | 2018-10-30 | 5h |  |  |  |  |  |  |  |  |  |  |  |  |
| 41 | 3.2.6 | **[v2]Diseño e implementacion b.componentes 1** |  | 1.25d | 2018-10-31 A | 2018-11-01 A |  | 100% |  | 2018-10-31 | 2018-11-01 | 1.25d |  | finish no later than 2018-11-07 | 2018-11-07 | David Ramón Sevilla [10%]; Jose Ramon Barea Cecilia [10%]; Jose Vicente Anton Coy [10%]; María Sánchez Marqués [10%]; Marines Ánton Castelló [10%]; Débora Galdeano González [10%] | 6h | 6h | 127.6 | 127.6 | 127.6 | 10 h | Jose ramon, Maria | 6 h |
| 42 | 3.2.6.1 | Investigar |  | 5h | 2018-10-31 A | 2018-10-31 A |  | 100% |  | 2018-10-31 | 2018-10-31 | 5h |  | start no earlier than 2018-10-31 |  |  |  |  |  |  |  |  |  |  |
| 43 | 3.2.6.2 | Diseñar |  | 5h | 2018-10-31 A | 2018-11-01 A | 42 | 100% |  | 2018-10-31 | 2018-11-01 | 5h |  |  |  |  |  |  |  |  |  |  |  |  |
| 44 | 3.2.7 | [v2]Utilización de joints en las mecánicas jugables (1/2) |  | 4h | 2018-10-25 A | 2018-10-25 A |  | 100% |  | 2018-10-25 | 2018-10-25 | 4h |  |  | 2018-11-07 | David Ramón Sevilla [10%]; Débora Galdeano González [10%]; Jose Ramon Barea Cecilia [10%]; Jose Vicente Anton Coy [10%]; María Sánchez Marqués [10%]; Marines Ánton Castelló [10%] | 2.4h | 2.4h | 58 | 58 | 58 | 17 h | Jose Ramon | 4 h |
| 45 | 3.2.8 | [V2]Mecánicas básicas entidades sin IA |  | 1h | 2018-10-25 | 2018-10-25 | 44 |  |  | 2018-10-25 | 2018-10-25 | 1h | 9.38d | finish no later than 2018-11-07 | 2018-11-07 | David Ramón Sevilla [15%]; Débora Galdeano González [15%]; Jose Ramon Barea Cecilia [15%]; Jose Vicente Anton Coy [15%]; María Sánchez Marqués [15%]; Marines Ánton Castelló [15%] | 0.9h |  | 34.8 | 34.8 |  | 30 h | Maria, jose vicente | 0 h |
| 46 | 3.2.9 | [RV]Boceto de los personajes 2/3 |  | 15h | 2018-11-02 A | 2018-11-05 A |  | 100% |  | 2018-11-02 | 2018-11-05 | 15h |  | start no earlier than 2018-11-02 | 2018-11-07 | María Sánchez Marqués [5%]; Débora Galdeano González [10%]; Marines Ánton Castelló [5%] | 3h | 3h | 65.6 | 65.6 | 65.6 | 15 h | Debora, Marines | 14 h |
| 47 | 3.2.10 | [PD]Vídeo con animación del logo de la empresa (2/2) |  | 30h | 2018-10-25 A | 2018-10-30 A |  | 100% |  | 2018-10-25 | 2018-10-30 | 30h |  |  |  | David Ramón Sevilla [10%]; Jose Vicente Anton Coy [10%]; Marines Ánton Castelló [10%] | 9h | 9h | 167.4 | 167.4 | 167.4 | 30 h | David | 1 h |
| 48 | 3.2.11 | **[TDS]Realizar sonidos para el juego 2/7** |  | 0.36d | 2018-10-25 A | 2018-10-25 A |  | 100% |  | 2018-10-25 | 2018-10-25 | 0.36d |  | finish no later than 2018-11-07 | 2018-11-07 | David Ramón Sevilla [15%]; Débora Galdeano González [15%]; María Sánchez Marqués [15%]; Jose Ramon Barea Cecilia [15%] | 11.96h | 11.96h | 335.28 | 335.28 | 335.28 | 15 h | David, Jose ramon, debora, maria | 9 h |
| 49 | 3.2.11.1 | Síntesis |  | 2.85h | 2018-10-25 A | 2018-10-25 A |  | 100% |  | 2018-10-25 | 2018-10-25 | 2.85h |  |  |  | David Ramón Sevilla [15%]; Jose Ramon Barea Cecilia [15%]; Débora Galdeano González [15%]; María Sánchez Marqués [15%] | 1.71h | 1.71h | 46.2 | 46.2 | 46.2 |  |  |  |
| 50 | 3.2.11.2 | Grabaciones propias |  | 2.85h | 2018-10-25 A | 2018-10-25 A |  | 100% |  | 2018-10-25 | 2018-10-25 | 2.85h |  |  |  | David Ramón Sevilla [15%]; Jose Ramon Barea Cecilia [15%]; Débora Galdeano González [15%]; María Sánchez Marqués [15%] | 1.71h | 1.71h | 46.2 | 46.2 | 46.2 |  |  |  |
| 51 | 3.2.11.3 | Sonidos externos |  | 2.85h | 2018-10-25 A | 2018-10-25 A |  | 100% |  | 2018-10-25 | 2018-10-25 | 2.85h |  |  |  | David Ramón Sevilla [15%]; Jose Ramon Barea Cecilia [15%]; Débora Galdeano González [15%]; María Sánchez Marqués [15%] | 1.71h | 1.71h | 46.2 | 46.2 | 46.2 |  |  |  |
| 52 | 3.2.11.4 | Música |  | 2.85h | 2018-10-25 A | 2018-10-25 A |  | 100% |  | 2018-10-25 | 2018-10-25 | 2.85h |  |  |  | David Ramón Sevilla [15%]; Jose Ramon Barea Cecilia [15%]; Débora Galdeano González [15%]; María Sánchez Marqués [15%] | 1.71h | 1.71h | 46.2 | 46.2 | 46.2 |  |  |  |
| 53 | 3.2.11.5 | Cue Sheet |  | 1.42h | 2018-10-25 A | 2018-10-25 A |  | 100% |  | 2018-10-25 | 2018-10-25 | 1.42h |  |  |  | David Ramón Sevilla [15%]; Jose Ramon Barea Cecilia [15%]; Débora Galdeano González [15%]; María Sánchez Marqués [15%] | 0.85h | 0.85h | 29.04 | 29.04 | 29.04 |  |  |  |
| 54 | 3.2.11.6 | Hoja de metadatos |  | 1.42h | 2018-10-25 A | 2018-10-25 A |  | 100% |  | 2018-10-25 | 2018-10-25 | 1.42h |  |  |  | David Ramón Sevilla [15%]; Jose Ramon Barea Cecilia [15%]; Débora Galdeano González [15%]; María Sánchez Marqués [15%] | 0.85h | 0.85h | 29.04 | 29.04 | 29.04 |  |  |  |
| 55 | 3.2.11.7 | Integración del motor de audio en el juego con prueba de concepto |  | 2.85h | 2018-10-25 A | 2018-10-25 A |  | 100% |  | 2018-10-25 | 2018-10-25 | 2.85h |  |  |  | David Ramón Sevilla [15%]; Jose Ramon Barea Cecilia [15%]; Débora Galdeano González [15%]; María Sánchez Marqués [15%] | 1.71h | 1.71h | 46.2 | 46.2 | 46.2 |  |  |  |
| 56 | 3.2.12 | [PM]Registrar tiempos y % de realización de tareas en Project |  | 48min | 2018-11-07 A | 2018-11-07 A |  | 100% |  | 2018-11-07 | 2018-11-07 | 48min |  | start no earlier than 2018-11-07 | 2018-11-07 | David Ramón Sevilla [2%]; Débora Galdeano González [2%]; Jose Ramon Barea Cecilia [2%]; Jose Vicente Anton Coy [2%]; María Sánchez Marqués [2%]; Marines Ánton Castelló [2%] | 0.1h | 0.1h | 4.18 | 4.18 | 4.18 | 48 m | Todos | 48 m |
| 57 | 3.2.13 | [PM]Rellenar documento Gestión de riesgos |  | 23.04h | 2018-11-02 A | 2018-11-06 A |  | 100% |  | 2018-11-02 | 2018-11-06 | 23.04h |  | start no earlier than 2018-11-02 | 2018-11-07 | David Ramón Sevilla [2%]; Débora Galdeano González [2%]; Jose Ramon Barea Cecilia [2%]; María Sánchez Marqués [2%]; Marines Ánton Castelló [2%]; Jose Vicente Anton Coy [2%] | 2.76h | 2.76h | 55.77 | 55.77 | 55.77 | 23 h | Maria, Debora, David | 9 h |

Notes:
- 31: Se mueven a iteraccion 4 por falta de tiempo. / Se mueve a la iteracion 5 por falta de tiempo.
- 32: Se mueven a iteraccion 4 por falta de tiempo. / Se mueve a la iteracion 5 por falta de tiempo.
- 33: Se pasa a la iteracion 5 por falta de tiempo.
- 37: bocetos
- 38: De diseño tenemos menos, empezamos a implementar
- 44: Se pasa a la iteracion 5 por falta de tiempo.
- 45: Se mueve a la iteracion 5 por problemas tecnicos de la persona a cargo.
- 46: Realizar enemigos. / Se pasa pequeña tarea de 4 horas a la iteracion 5.

| ID | WBS | Task | Duration | Start | Finish | Predecessors | Complete | Baseline start | Baseline finish | Baseline duration | Constraint | Resources | Work | Actual work | Cost | Baseline cost | Actual cost | Horas Reales | Encargados | Horas realizadas |
| --- | --- | --- | --- | --- | --- | --- | --- | --- | --- | --- | --- | --- | --- | --- | --- | --- | --- | --- | --- | --- |
| 58 | 3.3 | **Iteracion 5** | 10d | 2018-11-08 A | 2018-11-21 A |  | 100% | 2018-11-08 | 2018-11-21 | 10d | start no earlier than 2018-11-08 |  | 212.56h | 212.56h | 4,422.15 | 4,422.15 | 4,422.15 |  |  |  |
| 59 | 3.3.1 | [RV]Boceto de los personajes 3/3 | 4h | 2018-11-08 A | 2018-11-08 A |  | 100% | 2018-11-08 | 2018-11-08 | 4h |  | Débora Galdeano González [50%]; Marines Ánton Castelló [50%] | 4h | 4h | 100 | 100 | 100 | 4 h | Marines,Debora | 4,65 |
| 60 | 3.3.2 | [v1] Documento de diseño de toma de decision: espacio y metodos (2/2) | 28h | 2018-11-08 A | 2018-11-13 A |  | 100% | 2018-11-08 | 2018-11-13 | 28h |  | David Ramón Sevilla [50%]; Jose Vicente Anton Coy [50%] | 28h | 28h | 522 | 522 | 522 | 28 h | Jose vicente, David ramon | 10,7 |
| 61 | 3.3.3 | [V1]Documento de diseño técnico del motor de IA (2/2) | 29h | 2018-11-09 A | 2018-11-14 A |  | 100% | 2018-11-09 | 2018-11-14 | 29h | start no earlier than 2018-11-09 | Marines Ánton Castelló [80%] | 23.2h | 23.2h | 432 | 432 | 432 | 29 h | Marines | 12,85 |
| 62 | 3.3.4 | [V1]Sistema de toma de decisión con Behaviour Trees (3/2) (investigacion y diseño) | 36h | 2018-11-09 A | 2018-11-15 A |  | 100% | 2018-11-09 | 2018-11-15 | 36h | start no earlier than 2018-11-09 | Débora Galdeano González [80%] | 28.8h | 28.8h | 651.2 | 651.2 | 651.2 | 36 h | Debora | 53,2 |
| 63 | 3.3.5 | [v2]Utilización de joints en las mecánicas jugables (2/2) | 13h | 2018-11-09 A | 2018-11-12 A |  | 100% | 2018-11-09 | 2018-11-12 | 13h | start no earlier than 2018-11-09 | Jose Ramon Barea Cecilia [80%] | 10.4h | 10.4h | 224 | 224 | 224 | 17 h | Jose ramon | 26,86 |
| 64 | 3.3.6 | [V2]Mecánicas básicas entidades sin IA | 48h | 2018-11-08 A | 2018-11-15 A |  | 100% | 2018-11-08 | 2018-11-15 | 48h |  | María Sánchez Marqués [50%] | 24h | 24h | 490 | 490 | 490 | 30 h | Maria | 14,5 |
| 65 | 3.3.7 | [PM]Detallar plan iteraciones del mes de Noviembre. Creación Subtareas y precedencias en Project | 23.4h | 2018-11-08 A | 2018-11-12 A |  | 100% | 2018-11-08 | 2018-11-12 | 23.4h |  | Jose Vicente Anton Coy [2%]; David Ramón Sevilla [2%] | 0.94h | 0.94h | 17.57 | 17.57 | 17.57 | 23 h | Jose Vicente, David ramon | 0.5 |
| 66 | 3.3.8 | [PM]Detallar plan iteraciones del mes de Noviembre. Asignar recursos a las tareas en Project | 23h | 2018-11-12 A | 2018-11-15 A | 65 | 100% | 2018-11-12 | 2018-11-15 | 23h |  | David Ramón Sevilla [3%]; Jose Vicente Anton Coy [3%] | 1.38h | 1.38h | 25.92 | 25.92 | 25.92 | 23 h | Jose Vicente, David ramon |  |
| 67 | 3.3.9 | [PM]Aplicar el modelo EVA en Project | 21.6h | 2018-11-16 A | 2018-11-20 A |  | 100% | 2018-11-16 | 2018-11-20 | 21.6h | start no earlier than 2018-11-16 | David Ramón Sevilla [3%]; Jose Vicente Anton Coy [3%] | 1.3h | 1.3h | 24.41 | 24.41 | 24.41 | 21 h | Jose Vicente, David ramon |  |
| 68 | 3.3.10 | [RV]Bocetos de los elementos | 18h | 2018-11-16 A | 2018-11-20 A |  | 100% | 2018-11-16 | 2018-11-20 | 18h | start no earlier than 2018-11-16 | Débora Galdeano González [50%]; Marines Ánton Castelló [50%] | 18h | 18h | 380 | 380 | 380 | 18 h | Debora, marines | 0.9 |
| 69 | 3.3.11 | **[V2]Diseño e implementación b.objetos (3/10)** | 0.88d | 2018-11-15 A | 2018-11-15 A |  | 100% | 2018-11-15 | 2018-11-15 | 0.88d |  | Jose Vicente Anton Coy [10%]; David Ramón Sevilla [10%] | 1.4h | 1.4h | 28.8 | 28.8 | 28.8 | 7 h | Jose Vicente |  |
| 70 | 3.3.11.1 | Implementacion | 7h | 2018-11-15 A | 2018-11-15 A |  | 100% | 2018-11-15 | 2018-11-15 | 7h | start no earlier than 2018-11-15 |  |  |  |  |  |  | 7 h |  |  |
| 71 | 3.3.12 | [v2]Diseño e implementacion b.componentes 2 | 10h | 2018-11-15 A | 2018-11-16 A |  | 100% | 2018-11-15 | 2018-11-16 | 10h | start no earlier than 2018-11-15 | Jose Ramon Barea Cecilia [50%]; María Sánchez Marqués [50%] | 10h | 10h | 220 | 220 | 220 | 10 h | Maria | 10 |
| 72 | 3.3.13 | [v2]Formato propio para la definicion de los niveles(documentos con la especifiacion del formato) | 11h | 2018-11-13 A | 2018-11-14 A |  | 100% | 2018-11-13 | 2018-11-14 | 11h | start no earlier than 2018-11-13 | Jose Vicente Anton Coy [50%]; Jose Ramon Barea Cecilia [80%] | 14.3h | 14.3h | 300 | 300 | 300 | 11 h | Jose Vicente, Jose ramon | 5,2 |
| 73 | 3.3.14 | [V2]Creación de un cargador de niveles | 28h | 2018-11-14 A | 2018-11-19 A | 72 | 100% | 2018-11-14 | 2018-11-19 | 28h |  | Jose Ramon Barea Cecilia [50%]; Jose Vicente Anton Coy [50%] | 28h | 28h | 551 | 551 | 551 | 28 h | Jose Vicente, Jose Ramon | 12,6 |
| 74 | 3.3.15 | [v2]Implementacion de camara de seguimiento | 17h | 2018-11-16 A | 2018-11-20 A |  | 100% | 2018-11-16 | 2018-11-20 | 17h | start no earlier than 2018-11-16 | Marines Ánton Castelló [50%] | 8.5h | 8.5h | 162 | 162 | 162 | 17 h | Marines | 4,25 |
| 75 | 3.3.16 | **[TDS]Realizar sonidos para el juego 3/7** | 0.36d | 2018-11-08 A | 2018-11-08 A |  | 100% | 2018-11-08 | 2018-11-08 | 0.36d |  |  | 10.25h | 10.25h | 289.08 | 289.08 | 289.08 | 15 h | Debora, David, Jose ramon, Maria | 26.75 |
| 76 | 3.3.16.1 | Síntesis | 2.85h | 2018-11-08 A | 2018-11-08 A |  | 100% | 2018-11-08 | 2018-11-08 | 2.85h |  | David Ramón Sevilla [15%]; Jose Ramon Barea Cecilia [15%]; Débora Galdeano González [15%]; María Sánchez Marqués [15%] | 1.71h | 1.71h | 46.2 | 46.2 | 46.2 |  |  |  |
| 77 | 3.3.16.2 | Grabaciones propias | 2.85h | 2018-11-08 A | 2018-11-08 A |  | 100% | 2018-11-08 | 2018-11-08 | 2.85h |  | David Ramón Sevilla [15%]; Jose Ramon Barea Cecilia [15%]; Débora Galdeano González [15%]; María Sánchez Marqués [15%] | 1.71h | 1.71h | 46.2 | 46.2 | 46.2 |  |  |  |
| 78 | 3.3.16.3 | Sonidos externos | 2.85h | 2018-11-08 A | 2018-11-08 A |  | 100% | 2018-11-08 | 2018-11-08 | 2.85h |  | David Ramón Sevilla [15%]; Jose Ramon Barea Cecilia [15%]; Débora Galdeano González [15%]; María Sánchez Marqués [15%] | 1.71h | 1.71h | 46.2 | 46.2 | 46.2 |  |  |  |
| 79 | 3.3.16.4 | Música | 2.85h | 2018-11-08 A | 2018-11-08 A |  | 100% | 2018-11-08 | 2018-11-08 | 2.85h |  | David Ramón Sevilla [15%]; Jose Ramon Barea Cecilia [15%]; Débora Galdeano González [15%]; María Sánchez Marqués [15%] | 1.71h | 1.71h | 46.2 | 46.2 | 46.2 |  |  |  |
| 80 | 3.3.16.5 | Cue Sheet | 1.42h | 2018-11-08 A | 2018-11-08 A |  | 100% | 2018-11-08 | 2018-11-08 | 1.42h |  | David Ramón Sevilla [15%]; Jose Ramon Barea Cecilia [15%]; Débora Galdeano González [15%]; María Sánchez Marqués [15%] | 0.85h | 0.85h | 29.04 | 29.04 | 29.04 |  |  |  |
| 81 | 3.3.16.6 | Hoja de metadatos | 1.42h | 2018-11-08 A | 2018-11-08 A |  | 100% | 2018-11-08 | 2018-11-08 | 1.42h |  | David Ramón Sevilla [15%]; Jose Ramon Barea Cecilia [15%]; Débora Galdeano González [15%]; María Sánchez Marqués [15%] | 0.85h | 0.85h | 29.04 | 29.04 | 29.04 |  |  |  |
| 82 | 3.3.16.7 | Integración del motor de audio en el juego con prueba de concepto | 2.85h | 2018-11-08 A | 2018-11-08 A |  | 100% | 2018-11-08 | 2018-11-08 | 2.85h |  | David Ramón Sevilla [15%]; Jose Ramon Barea Cecilia [15%]; Débora Galdeano González [15%]; María Sánchez Marqués [15%] | 1.71h | 1.71h | 46.2 | 46.2 | 46.2 |  |  |  |
| 83 | 3.3.17 | [PM]Registrar tiempos y % de realización de tareas en Project | 48min | 2018-11-21 A | 2018-11-21 A |  | 100% | 2018-11-21 | 2018-11-21 | 48min | finish no earlier than 2018-11-21 | David Ramón Sevilla [2%]; Débora Galdeano González [2%]; Jose Ramon Barea Cecilia [2%]; Jose Vicente Anton Coy [2%]; María Sánchez Marqués [2%]; Marines Ánton Castelló [2%] | 0.1h | 0.1h | 4.18 | 4.18 | 4.18 | 48 minutos | Todos | 48 minutos |

Notes:
- 62: Se crea una tarea en la iteracion 6 para implementarlo
- 68: Se mueve a la iteraccion 5 por que faltan bocetos de personajes
- 83: Se han realizado en excel por comodidad, las proximas en toggl

| ID | WBS | Task | Duration | Start | Finish | Predecessors | Complete | Remaining | Baseline start | Baseline finish | Baseline duration | Total slack | Free slack | Constraint | Resources | Work | Actual work | Cost | Baseline cost | Actual cost | Horas Reales | Encargados | Horas realizadas |
| --- | --- | --- | --- | --- | --- | --- | --- | --- | --- | --- | --- | --- | --- | --- | --- | --- | --- | --- | --- | --- | --- | --- | --- |
| 84 | 3.4 | **Iteracion 6** | 10d | 2018-11-22 A | 2018-12-05 |  | 71% | 2.89d | 2018-11-22 | 2018-12-05 | 9.75d | 108d |  | start no earlier than 2018-11-22 |  | 184.34h | 151.59h | 3,771.06 | 4,171.06 | 3,128.81 |  |  |  |
| 85 | 3.4.1 | **[v1]Movimiento IA (PATHFINDING)** | 3.75d | 2018-11-22 A | 2018-11-27 A |  | 100% |  | 2018-11-22 | 2018-11-30 | 50h |  |  |  | Débora Galdeano González [50%]; Marines Ánton Castelló [50%] | 30h | 30h | 620 | 1,020 | 620 | 30 h | Marines, Debora | 31.5 |
| 86 | 3.4.1.1 | Investigacion | 10h | 2018-11-22 A | 2018-11-23 A |  | 100% |  |  |  |  |  |  |  |  |  |  |  |  |  | 10 h |  |  |
| 87 | 3.4.1.2 | Implementacion | 20h | 2018-11-23 A | 2018-11-27 A | 86 | 100% |  |  |  |  |  |  |  |  |  |  |  |  |  | 10 h |  |  |
| 88 | 3.4.2 | **[V1]Sistema de percepción sensorial (vista, oído, olfato, canales…)** | 5.75d | 2018-11-22 A | 2018-11-29 A |  | 100% |  | 2018-11-22 | 2018-11-29 | 5.75d |  |  |  | Jose Vicente Anton Coy [50%]; David Ramón Sevilla [50%] | 46h | 46h | 846 | 846 | 846 | 46 h | Jose vicente, David ramon | 30 |
| 89 | 3.4.2.1 | Investigacion | 16h | 2018-11-22 A | 2018-11-23 A |  | 100% |  | 2018-11-22 | 2018-11-23 | 16h |  |  | start no earlier than 2018-11-22 |  |  |  |  |  |  |  |  |  |
| 90 | 3.4.2.2 | Diseño | 6h | 2018-11-26 A | 2018-11-26 A | 89 | 100% |  | 2018-11-26 | 2018-11-26 | 6h |  |  |  |  |  |  |  |  |  |  |  |  |
| 91 | 3.4.2.3 | Implementar | 24h | 2018-11-26 A | 2018-11-29 A | 90 | 100% |  | 2018-11-26 | 2018-11-29 | 24h |  |  |  |  |  |  |  |  |  |  |  |  |
| 92 | 3.4.3 | [V1]Sistema de toma de decisión con Behaviour Trees (3/3) (Implementacion) | 20h | 2018-11-29 A | 2018-12-04 A | 85, 88 | 100% |  | 2018-11-30 | 2018-12-04 | 20h |  |  |  | Marines Ánton Castelló [50%]; Débora Galdeano González [50%] | 20h | 20h | 420 | 420 | 420 | 20 h | Marines, debora | 26.6 |
| 93 | 3.4.4 | [v2]Control del player: movimiento y colisiones sin motor de físicas | 40h | 2018-11-22 A | 2018-11-28 |  | 50% | 20h | 2018-11-22 | 2018-11-28 | 40h | 113d |  |  | María Sánchez Marqués [50%]; Jose Ramon Barea Cecilia [50%] | 40h | 20h | 820 | 820 | 420 | 40 h | Jose ramon, Maria | 47.55 |
| 94 | 3.4.5 | [V2]Utilización de propiedades físicas en las mecánicas jugables | 17h | 2018-11-29 A | 2018-12-03 |  | 25% | 12.75h | 2018-11-29 | 2018-12-03 | 17h | 110.88d |  | start no earlier than 2018-11-29 | Jose Ramon Barea Cecilia [50%]; Jose Vicente Anton Coy [50%] | 17h | 4.25h | 342 | 342 | 99.75 | 17 h | Jose ramon, Jose vicente |  |
| 95 | 3.4.6 | [RV]Bocetos del entorno | 18h | 2018-11-29 A | 2018-12-03 A |  | 100% |  | 2018-11-29 | 2018-12-03 | 18h |  |  | start no earlier than 2018-11-29 | Débora Galdeano González [50%]; María Sánchez Marqués [50%] | 18h | 18h | 399 | 399 | 399 | 18 h | Debora, Maria | 6.5 |
| 96 | 3.4.7 | **[TDS]Realizar sonidos para el juego 4/7** | 0.36d | 2018-11-22 A | 2018-11-22 A |  | 100% |  | 2018-11-22 | 2018-11-22 | 0.36d |  |  |  | David Ramón Sevilla [10%]; María Sánchez Marqués [10%]; Débora Galdeano González [10%]; Jose Ramon Barea Cecilia [10%] | 11.39h | 11.39h | 319.88 | 319.88 | 319.88 | 15 h | Maria, Debora, David, Jose ramon | 43.2 |
| 97 | 3.4.7.1 | Síntesis | 2.85h | 2018-11-22 A | 2018-11-22 A |  | 100% |  | 2018-11-22 | 2018-11-22 | 2.85h |  |  |  | David Ramón Sevilla [15%]; Jose Ramon Barea Cecilia [15%]; Débora Galdeano González [15%]; María Sánchez Marqués [15%] | 1.71h | 1.71h | 46.2 | 46.2 | 46.2 |  |  |  |
| 98 | 3.4.7.2 | Grabaciones propias | 2.85h | 2018-11-22 A | 2018-11-22 A |  | 100% |  | 2018-11-22 | 2018-11-22 | 2.85h |  |  |  | David Ramón Sevilla [15%]; Jose Ramon Barea Cecilia [15%]; Débora Galdeano González [15%]; María Sánchez Marqués [15%] | 1.71h | 1.71h | 46.2 | 46.2 | 46.2 |  |  |  |
| 99 | 3.4.7.3 | Sonidos externos | 2.85h | 2018-11-22 A | 2018-11-22 A |  | 100% |  | 2018-11-22 | 2018-11-22 | 2.85h |  |  |  | David Ramón Sevilla [15%]; Jose Ramon Barea Cecilia [15%]; Débora Galdeano González [15%]; María Sánchez Marqués [15%] | 1.71h | 1.71h | 46.2 | 46.2 | 46.2 |  |  |  |
| 100 | 3.4.7.4 | Música | 2.85h | 2018-11-22 A | 2018-11-22 A |  | 100% |  | 2018-11-22 | 2018-11-22 | 2.85h |  |  |  | David Ramón Sevilla [15%]; Jose Ramon Barea Cecilia [15%]; Débora Galdeano González [15%]; María Sánchez Marqués [15%] | 1.71h | 1.71h | 46.2 | 46.2 | 46.2 |  |  |  |
| 101 | 3.4.7.5 | Cue Sheet | 1.42h | 2018-11-22 A | 2018-11-22 A |  | 100% |  | 2018-11-22 | 2018-11-22 | 1.42h |  |  |  | David Ramón Sevilla [15%]; Jose Ramon Barea Cecilia [15%]; Débora Galdeano González [15%]; María Sánchez Marqués [15%] | 0.85h | 0.85h | 29.04 | 29.04 | 29.04 |  |  |  |
| 102 | 3.4.7.6 | Hoja de metadatos | 1.42h | 2018-11-22 A | 2018-11-22 A |  | 100% |  | 2018-11-22 | 2018-11-22 | 1.42h |  |  |  | David Ramón Sevilla [15%]; Jose Ramon Barea Cecilia [15%]; Débora Galdeano González [15%]; María Sánchez Marqués [15%] | 0.85h | 0.85h | 29.04 | 29.04 | 29.04 |  |  |  |
| 103 | 3.4.7.7 | Integración del motor de audio en el juego con prueba de concepto | 2.85h | 2018-11-22 A | 2018-11-22 A |  | 100% |  | 2018-11-22 | 2018-11-22 | 2.85h |  |  |  | David Ramón Sevilla [15%]; Jose Ramon Barea Cecilia [15%]; Débora Galdeano González [15%]; María Sánchez Marqués [15%] | 1.71h | 1.71h | 46.2 | 46.2 | 46.2 |  |  |  |
| 104 | 3.4.8 | [V1]Sistema de distribución central de tiempo de proceso (Scheduling) | 41h | 2018-11-27 A | 2018-12-04 |  | 25% | 30.75h | 2018-11-27 | 2018-12-04 | 41h | 104.5d | 6.5d | start no earlier than 2018-11-27 |  |  |  |  |  |  | 41 h | Jose vicente, David ramon | 2.5 |
| 105 | 3.4.9 | [V2]Diseño e implementación b.objetos (4/10) | 7h | 2018-11-22 A | 2018-11-22 A |  | 100% |  | 2018-11-22 | 2018-11-22 | 7h |  |  |  | Todos [5%] | 0.35h | 0.35h |  |  |  | 7 h | todos |  |
| 106 | 3.4.10 | [v2]Diseño e implementacion b.componentes 3 | 10h | 2018-11-22 A | 2018-11-23 A |  | 100% |  | 2018-11-22 | 2018-11-23 | 10h |  |  |  | Todos [5%] | 0.5h | 0.5h |  |  |  | 10 h | todos | 10 |
| 107 | 3.4.11 | [V2]Uso de trazado de rayos y otros tests de las físicas | 17h | 2018-11-30 | 2018-12-04 |  |  |  | 2018-11-30 | 2018-12-04 | 17h | 109.38d |  | start no earlier than 2018-11-30 |  |  |  |  |  |  | 17 h | jose ramon, maria |  |

| ID | WBS | Task | Type | Duration | Start | Finish | Predecessors | Complete | Remaining | Baseline start | Baseline finish | Baseline duration | Total slack | Free slack | Constraint | Resources | Work | Actual work | Cost | Baseline cost | Actual cost | Horas Reales | Encargados | Horas realizadas |
| --- | --- | --- | --- | --- | --- | --- | --- | --- | --- | --- | --- | --- | --- | --- | --- | --- | --- | --- | --- | --- | --- | --- | --- | --- |
| 108 | 3.4.12 | **[V2]Mecánicas de puzzles** |  | 4d | 2018-11-30 A | 2018-12-05 |  | 75% | 1d | 2018-11-30 | 2018-12-05 | 30h | 108d |  |  |  |  |  |  |  |  | 30 h | marines | 26.6 |
| 109 | 3.4.12.1 | Investigacion |  | 10h | 2018-11-30 A | 2018-12-03 A |  | 100% |  |  |  |  |  |  | start no earlier than 2018-11-29 |  |  |  |  |  |  | 10 h |  |  |
| 110 | 3.4.12.2 | Implementacion |  | 22h | 2018-12-03 A | 2018-12-05 | 109 | 64% | 8h |  |  |  | 108d |  |  |  |  |  |  |  |  | 22 h |  |  |
| 111 | 3.4.13 | [PM] Presentacion de Licencias de programas |  | 10h | 2018-11-22 A | 2018-11-23 A |  | 100% |  | 2018-11-22 | 2018-11-23 | 10h |  |  |  | Todos [10%] | 1h | 1h |  |  |  | 10 h | todos | 41.6 |
| 112 | 3.4.14 | [PM]Registrar tiempos y % de realización de tareas en Project |  | 48min | 2018-12-04 A | 2018-12-04 A |  | 100% |  | 2018-12-04 | 2018-12-04 | 48min |  |  | finish no earlier than 2018-12-04 | David Ramón Sevilla [2%]; Débora Galdeano González [2%]; Jose Ramon Barea Cecilia [2%]; Jose Vicente Anton Coy [2%]; María Sánchez Marqués [2%]; Marines Ánton Castelló [2%] | 0.1h | 0.1h | 4.18 | 4.18 | 4.18 | 48 h | todos | 30 m |
| 113 | 3.5 | **Iteracion 7** |  | 11d | 2018-12-07 | 2018-12-21 |  |  |  | 2018-12-06 | 2018-12-17 | 7.5d | 96d |  |  |  | 63.85h |  | 1,377.26 | 289.08 |  |  |  |  |
| 114 | 3.5.1 | [PM]Detallar plan iteraciones del mes de Diciembre. Creación Subtareas y precedencias en Project |  | 23.04h | 2018-12-07 | 2018-12-11 |  |  |  | 2018-12-06 | 2018-12-10 | 23.04h | 101.24d | 0d | start no earlier than 2018-12-07 |  |  |  |  |  |  |  | David , Jose vicente |  |
| 115 | 3.5.2 | [PM]Detallar plan iteraciones del mes de Diciembre. Asignar recursos a las tareas en Project |  | 23.04h | 2018-12-11 | 2018-12-14 | 114 |  |  | 2018-12-10 | 2018-12-13 | 23.04h | 101.24d |  | start no earlier than 2018-12-07 |  |  |  |  |  |  |  | David , Jose vicente |  |
| 116 | 3.5.3 | [v2]Control de player colisiones |  | 10h | 2018-12-07 | 2018-12-10 |  |  |  |  |  |  | 105.75d |  | start no earlier than 2018-12-07 | Jose Ramon Barea Cecilia [50%]; María Sánchez Marqués [50%] | 10h |  | 220 |  |  |  | Jose ramon |  |
| 117 | 3.5.4 | [v1] percepcion visual |  | 10h | 2018-12-07 | 2018-12-10 |  |  |  |  |  |  | 105.75d |  | start no earlier than 2018-12-07 | Jose Vicente Anton Coy [50%] | 5h |  | 99 |  |  |  | jose vicente |  |
| 118 | 3.5.5 | [v2]Mecanicas de puzzle 2/2 |  | 5h | 2018-12-07 | 2018-12-07 |  |  |  |  |  |  | 106.38d |  | start no earlier than 2018-12-07 | Marines Ánton Castelló [50%] | 2.5h |  | 54 |  |  |  | marines |  |
| 119 | 3.5.6 | [v2]Mecanicas de Accion |  | 32h | 2018-12-10 | 2018-12-13 |  |  |  | 2018-12-06 | 2018-12-11 | 32h | 102d |  | start no earlier than 2018-12-10 |  |  |  |  |  |  | 32 h | Debora, David, Jose ramon |  |
| 120 | 3.5.7 | [V2]Mecánicas de rol |  | 30h | 2018-12-10 | 2018-12-13 |  |  |  | 2018-12-06 | 2018-12-11 | 30h | 102.25d |  | start no earlier than 2018-12-10 |  |  |  |  |  |  | 30 h | Maria, Marines, Jose vicente |  |
| 121 | 3.5.8 | **[TDS]Realizar sonidos para el juego 5/7** |  | 0.36d | 2018-12-07 | 2018-12-07 |  |  |  | 2018-12-06 | 2018-12-06 | 0.36d | 106.64d |  | start no earlier than 2018-12-07 |  | 10.25h |  | 289.08 | 289.08 |  | 15 h | Debora, David, Maria, Jose ramon |  |
| 122 | 3.5.8.1 | Síntesis |  | 2.85h | 2018-12-07 | 2018-12-07 |  |  |  | 2018-12-06 | 2018-12-06 | 2.85h | 106.64d |  |  | David Ramón Sevilla [15%]; Jose Ramon Barea Cecilia [15%]; Débora Galdeano González [15%]; María Sánchez Marqués [15%] | 1.71h |  | 46.2 | 46.2 |  |  |  |  |
| 123 | 3.5.8.2 | Grabaciones propias |  | 2.85h | 2018-12-07 | 2018-12-07 |  |  |  | 2018-12-06 | 2018-12-06 | 2.85h | 106.64d |  |  | David Ramón Sevilla [15%]; Jose Ramon Barea Cecilia [15%]; Débora Galdeano González [15%]; María Sánchez Marqués [15%] | 1.71h |  | 46.2 | 46.2 |  |  |  |  |
| 124 | 3.5.8.3 | Sonidos externos |  | 2.85h | 2018-12-07 | 2018-12-07 |  |  |  | 2018-12-06 | 2018-12-06 | 2.85h | 106.64d |  |  | David Ramón Sevilla [15%]; Jose Ramon Barea Cecilia [15%]; Débora Galdeano González [15%]; María Sánchez Marqués [15%] | 1.71h |  | 46.2 | 46.2 |  |  |  |  |
| 125 | 3.5.8.4 | Música |  | 2.85h | 2018-12-07 | 2018-12-07 |  |  |  | 2018-12-06 | 2018-12-06 | 2.85h | 106.64d |  |  | David Ramón Sevilla [15%]; Jose Ramon Barea Cecilia [15%]; Débora Galdeano González [15%]; María Sánchez Marqués [15%] | 1.71h |  | 46.2 | 46.2 |  |  |  |  |
| 126 | 3.5.8.5 | Cue Sheet |  | 1.42h | 2018-12-07 | 2018-12-07 |  |  |  | 2018-12-06 | 2018-12-06 | 1.42h | 106.82d |  |  | David Ramón Sevilla [15%]; Jose Ramon Barea Cecilia [15%]; Débora Galdeano González [15%]; María Sánchez Marqués [15%] | 0.85h |  | 29.04 | 29.04 |  |  |  |  |
| 127 | 3.5.8.6 | Hoja de metadatos |  | 1.42h | 2018-12-07 | 2018-12-07 |  |  |  | 2018-12-06 | 2018-12-06 | 1.42h | 106.82d |  |  | David Ramón Sevilla [15%]; Jose Ramon Barea Cecilia [15%]; Débora Galdeano González [15%]; María Sánchez Marqués [15%] | 0.85h |  | 29.04 | 29.04 |  |  |  |  |
| 128 | 3.5.8.7 | Integración del motor de audio en el juego con prueba de concepto |  | 2.85h | 2018-12-07 | 2018-12-07 |  |  |  | 2018-12-06 | 2018-12-06 | 2.85h | 106.64d |  |  | David Ramón Sevilla [15%]; Jose Ramon Barea Cecilia [15%]; Débora Galdeano González [15%]; María Sánchez Marqués [15%] | 1.71h |  | 46.2 | 46.2 |  |  |  |  |
| 129 | 3.5.9 | [V2]Diseño e implementación b.objetos (5/10) |  | 7h | 2018-12-07 | 2018-12-07 |  |  |  | 2018-12-06 | 2018-12-06 | 7h | 106.12d |  | start no earlier than 2018-12-07 |  |  |  |  |  |  | 7 h | Todos |  |
| 130 | 3.5.10 | [v2]Diseño e implementacion b.componentes 5 |  | 10h | 2018-12-07 | 2018-12-10 |  |  |  | 2018-12-06 | 2018-12-07 | 10h | 105.75d |  | start no earlier than 2018-12-07 |  |  |  |  |  |  | 10 h | Todos |  |
| 131 | 3.5.11 | [v2]Uso de sistema de depuración visual de las físicas |  | 10h | 2018-12-11 | 2018-12-12 |  |  |  | 2018-12-06 | 2018-12-07 | 10h | 103.75d |  | start no earlier than 2018-12-11 |  |  |  |  |  |  | 10 h | Jose Vicente, David ramon |  |
| 132 | 3.5.12 | [v1]Gestión de recursos de IA con Level-of-Detail (LoD) |  | 40h | 2018-12-13 | 2018-12-19 | 104 |  |  | 2018-12-06 | 2018-12-12 | 40h | 98d |  | start no earlier than 2018-12-13 |  |  |  |  |  |  | 40 h | David ramon, Marines |  |
| 133 | 3.5.13 | [v2]Power-ups y elementos adicionales |  | 28h | 2018-12-13 | 2018-12-18 |  |  |  | 2018-12-06 | 2018-12-11 | 28h | 99.5d |  | start no earlier than 2018-12-13 |  |  |  |  |  |  | 28 h | Debora, Maria |  |
| 134 | 3.5.14 | [V1]Sistema de distribución central de tiempo de proceso (Scheduling) |  | 38h | 2018-12-17 | 2018-12-21 |  |  |  |  |  |  | 96.25d |  | start no earlier than 2018-12-15 | David Ramón Sevilla [50%] | 19h |  | 351 |  |  |  | david ramon |  |
| 135 | 3.5.15 | [V2]Uso de trazado de rayos y otros tests de las físicas |  | 17h | 2018-12-17 | 2018-12-19 |  |  |  |  |  |  | 98.88d |  | start no earlier than 2018-12-17 | Jose Ramon Barea Cecilia [50%]; María Sánchez Marqués [50%] | 17h |  | 360 |  |  |  | jose ramon |  |
| 136 | 3.5.16 | [PD]Cartel juego/proyecto |  | 60h | 2018-12-10 | 2018-12-19 |  |  |  | 2018-12-06 | 2018-12-17 | 60h | 98.5d |  | start no earlier than 2018-12-10 |  |  |  |  |  |  | 60 h | Jose ramon, marines, jose vicente, david |  |
| 137 | 3.5.17 | [PM]Registrar tiempos y % de realización de tareas en Project |  | 48min | 2018-12-21 | 2018-12-21 |  |  |  | 2018-12-04 | 2018-12-04 | 48min | 96d |  | finish no earlier than 2018-12-21 | David Ramón Sevilla [2%]; Débora Galdeano González [2%]; Jose Ramon Barea Cecilia [2%]; Jose Vicente Anton Coy [2%]; María Sánchez Marqués [2%]; Marines Ánton Castelló [2%] | 0.1h |  | 4.18 | 4.18 |  | 48 h | todos | 30 m |
| 138 | 3.6 | [PM]Comparar la planificación prevista y real en Project hito 1 |  | 21.6h | 2018-10-01 | 2018-10-03 |  |  |  | 2018-10-01 | 2018-10-03 | 21.6h | 147d | 0d |  |  |  |  |  |  |  |  |  |  |
| 139 | 3.7 | [PM]Confeccionar Informes de iteración e informe resumen de Hito 1 |  | 21.6h | 2018-10-03 | 2018-10-08 | 138 |  |  | 2018-10-03 | 2018-10-08 | 21.6h | 147d | 0d |  |  |  |  |  |  |  |  |  |  |
| 140 | 3.8 | [PM]Elaborar la presentación del Hito 1 |  | 14.4h | 2018-10-08 | 2018-10-10 | 139 |  |  | 2018-10-08 | 2018-10-10 | 14.4h | 147d | 0d |  |  |  |  |  |  |  |  |  |  |
| 141 | 3.9 | [PM]Exponer la presentación del Hito 1 |  | 14.4h | 2018-10-10 | 2018-10-11 | 140 |  |  | 2018-10-10 | 2018-10-11 | 14.4h | 147d |  |  |  |  |  |  |  |  |  |  |  |
| 142 | 4 | Versión Alpha de mecánicas | milestone | 0d | 2018-12-22 | 2018-12-22 | 11 |  |  | 2018-12-22 | 2018-12-22 | 0d | 96d |  | start no earlier than 2018-12-22 |  |  |  |  |  |  |  |  |  |

Notes:
- 112: Se han realizado en excel por comodidad, las proximas en toggl
- 137: Se han realizado en excel por comodidad, las proximas en toggl

| ID | WBS | Task | Type | Duration | Start | Finish | Predecessors | Baseline start | Baseline finish | Baseline duration | Total slack | Free slack | Constraint | Deadline | Resources | Work | Cost | Baseline cost |
| --- | --- | --- | --- | --- | --- | --- | --- | --- | --- | --- | --- | --- | --- | --- | --- | --- | --- | --- |
| 143 | 5 | **Hito 2** |  | 15.25d? | 2018-12-24 | 2019-01-14 |  | 2018-12-24 | 2019-01-14 | 15.25d? | 9.75d | 0d |  | 2019-01-25 |  | 20.51h | 578.16 | 578.16 |
| 144 | 5.1 | **Navidad** |  | 1.25d? | 2018-12-24 | 2018-12-25 |  | 2018-12-24 | 2018-12-25 | 1.25d? | 23.75d |  | start no earlier than 2018-12-22 |  |  | 10.25h | 289.08 | 289.08 |
| 145 | 5.1.1 | [V2]Diseño e implementación b.objetos (6/10) |  | 7h | 2018-12-24 | 2018-12-24 |  | 2018-12-24 | 2018-12-24 | 7h | 24.12d |  |  |  |  |  |  |  |
| 146 | 5.1.2 | [v2]Diseño e implementacion b.componentes 6 |  | 10h | 2018-12-24 | 2018-12-25 |  | 2018-12-24 | 2018-12-25 | 10h | 23.75d |  | start no earlier than 2018-12-10 |  |  |  |  |  |
| 147 | 5.1.3 | **[TDS]Realizar sonidos para el juego 6/7** |  | 0.36d | 2018-12-24 | 2018-12-24 |  | 2018-12-24 | 2018-12-24 | 0.36d | 24.64d |  |  |  |  | 10.25h | 289.08 | 289.08 |
| 148 | 5.1.3.1 | Síntesis |  | 2.85h | 2018-12-24 | 2018-12-24 |  | 2018-12-24 | 2018-12-24 | 2.85h | 24.64d |  |  |  | David Ramón Sevilla [15%]; Jose Ramon Barea Cecilia [15%]; Débora Galdeano González [15%]; María Sánchez Marqués [15%] | 1.71h | 46.2 | 46.2 |
| 149 | 5.1.3.2 | Grabaciones propias |  | 2.85h | 2018-12-24 | 2018-12-24 |  | 2018-12-24 | 2018-12-24 | 2.85h | 24.64d |  |  |  | David Ramón Sevilla [15%]; Jose Ramon Barea Cecilia [15%]; Débora Galdeano González [15%]; María Sánchez Marqués [15%] | 1.71h | 46.2 | 46.2 |
| 150 | 5.1.3.3 | Sonidos externos |  | 2.85h | 2018-12-24 | 2018-12-24 |  | 2018-12-24 | 2018-12-24 | 2.85h | 24.64d |  |  |  | David Ramón Sevilla [15%]; Jose Ramon Barea Cecilia [15%]; Débora Galdeano González [15%]; María Sánchez Marqués [15%] | 1.71h | 46.2 | 46.2 |
| 151 | 5.1.3.4 | Música |  | 2.85h | 2018-12-24 | 2018-12-24 |  | 2018-12-24 | 2018-12-24 | 2.85h | 24.64d |  |  |  | David Ramón Sevilla [15%]; Jose Ramon Barea Cecilia [15%]; Débora Galdeano González [15%]; María Sánchez Marqués [15%] | 1.71h | 46.2 | 46.2 |
| 152 | 5.1.3.5 | Cue Sheet |  | 1.42h | 2018-12-24 | 2018-12-24 |  | 2018-12-24 | 2018-12-24 | 1.42h | 24.82d |  |  |  | David Ramón Sevilla [15%]; Jose Ramon Barea Cecilia [15%]; Débora Galdeano González [15%]; María Sánchez Marqués [15%] | 0.85h | 29.04 | 29.04 |
| 153 | 5.1.3.6 | Hoja de metadatos |  | 1.42h | 2018-12-24 | 2018-12-24 |  | 2018-12-24 | 2018-12-24 | 1.42h | 24.82d |  |  |  | David Ramón Sevilla [15%]; Jose Ramon Barea Cecilia [15%]; Débora Galdeano González [15%]; María Sánchez Marqués [15%] | 0.85h | 29.04 | 29.04 |
| 154 | 5.1.3.7 | Integración del motor de audio en el juego con prueba de concepto |  | 2.85h | 2018-12-24 | 2018-12-24 |  | 2018-12-24 | 2018-12-24 | 2.85h | 24.64d |  |  |  | David Ramón Sevilla [15%]; Jose Ramon Barea Cecilia [15%]; Débora Galdeano González [15%]; María Sánchez Marqués [15%] | 1.71h | 46.2 | 46.2 |
| 155 | 5.1.4 | <Tarea nueva> |  | 1d? | 2018-12-24 | 2018-12-24 |  | 2018-12-24 | 2018-12-24 | 1d? | 24d |  |  |  |  |  |  |  |
| 156 | 5.2 | **Iteracion 8** |  | 1.25d? | 2019-01-11 | 2019-01-14 |  | 2019-01-11 | 2019-01-14 | 1.25d? | 9.75d |  | start no earlier than 2019-01-11 |  |  | 10.25h | 289.08 | 289.08 |
| 157 | 5.2.1 | [V2]Diseño e implementación b.objetos (7/10) |  | 7h | 2019-01-11 | 2019-01-11 |  | 2019-01-11 | 2019-01-11 | 7h | 10.12d |  |  |  |  |  |  |  |
| 158 | 5.2.2 | [v2]Diseño e implementacion b.componentes 7 |  | 10h | 2019-01-11 | 2019-01-14 |  | 2019-01-11 | 2019-01-14 | 10h | 9.75d |  | start no earlier than 2018-12-24 |  |  |  |  |  |
| 159 | 5.2.3 | **[TDS]Realizar sonidos para el juego 7/7** |  | 0.36d | 2019-01-11 | 2019-01-11 |  | 2019-01-11 | 2019-01-11 | 0.36d | 10.64d |  |  |  |  | 10.25h | 289.08 | 289.08 |
| 160 | 5.2.3.1 | Síntesis |  | 2.85h | 2019-01-11 | 2019-01-11 |  | 2019-01-11 | 2019-01-11 | 2.85h | 10.64d |  |  |  | David Ramón Sevilla [15%]; Jose Ramon Barea Cecilia [15%]; Débora Galdeano González [15%]; María Sánchez Marqués [15%] | 1.71h | 46.2 | 46.2 |
| 161 | 5.2.3.2 | Grabaciones propias |  | 2.85h | 2019-01-11 | 2019-01-11 |  | 2019-01-11 | 2019-01-11 | 2.85h | 10.64d |  |  |  | David Ramón Sevilla [15%]; Jose Ramon Barea Cecilia [15%]; Débora Galdeano González [15%]; María Sánchez Marqués [15%] | 1.71h | 46.2 | 46.2 |
| 162 | 5.2.3.3 | Sonidos externos |  | 2.85h | 2019-01-11 | 2019-01-11 |  | 2019-01-11 | 2019-01-11 | 2.85h | 10.64d |  |  |  | David Ramón Sevilla [15%]; Jose Ramon Barea Cecilia [15%]; Débora Galdeano González [15%]; María Sánchez Marqués [15%] | 1.71h | 46.2 | 46.2 |
| 163 | 5.2.3.4 | Música |  | 2.85h | 2019-01-11 | 2019-01-11 |  | 2019-01-11 | 2019-01-11 | 2.85h | 10.64d |  |  |  | David Ramón Sevilla [15%]; Jose Ramon Barea Cecilia [15%]; Débora Galdeano González [15%]; María Sánchez Marqués [15%] | 1.71h | 46.2 | 46.2 |
| 164 | 5.2.3.5 | Cue Sheet |  | 1.42h | 2019-01-11 | 2019-01-11 |  | 2019-01-11 | 2019-01-11 | 1.42h | 10.82d |  |  |  | David Ramón Sevilla [15%]; Jose Ramon Barea Cecilia [15%]; Débora Galdeano González [15%]; María Sánchez Marqués [15%] | 0.85h | 29.04 | 29.04 |
| 165 | 5.2.3.6 | Hoja de metadatos |  | 1.42h | 2019-01-11 | 2019-01-11 |  | 2019-01-11 | 2019-01-11 | 1.42h | 10.82d |  |  |  | David Ramón Sevilla [15%]; Jose Ramon Barea Cecilia [15%]; Débora Galdeano González [15%]; María Sánchez Marqués [15%] | 0.85h | 29.04 | 29.04 |
| 166 | 5.2.3.7 | Integración del motor de audio en el juego con prueba de concepto |  | 2.85h | 2019-01-11 | 2019-01-11 |  | 2019-01-11 | 2019-01-11 | 2.85h | 10.64d |  |  |  | David Ramón Sevilla [15%]; Jose Ramon Barea Cecilia [15%]; Débora Galdeano González [15%]; María Sánchez Marqués [15%] | 1.71h | 46.2 | 46.2 |
| 167 | 5.2.4 | <Tarea nueva> |  | 1d? | 2019-01-11 | 2019-01-11 |  | 2019-01-11 | 2019-01-11 | 1d? | 10d |  |  |  |  |  |  |  |
| 168 | 5.3 | [PM]Revisar especificación proyecto |  | 1d | 2018-12-24 | 2018-12-24 |  | 2018-12-24 | 2018-12-24 | 1d | 24d |  | start no earlier than 2018-12-22 |  |  |  |  |  |
| 169 | 5.4 | [PM]Reestimar proyecto |  | 1d? | 2018-12-24 | 2018-12-24 |  | 2018-12-24 | 2018-12-24 | 1d? | 24d |  | start no earlier than 2018-12-22 |  |  |  |  |  |
| 170 | 5.5 | [PM]Detallar plan iteraciones del mes de Enero. Creación Subtareas y precedencias en Project |  | 1d? | 2018-12-24 | 2018-12-24 |  | 2018-12-24 | 2018-12-24 | 1d? | 24d |  | start no earlier than 2018-12-22 |  |  |  |  |  |
| 171 | 5.6 | [PM]Detallar plan iteraciones del mes de Enero. Asignar recursos a las tareas en Project |  | 1d? | 2018-12-24 | 2018-12-24 |  | 2018-12-24 | 2018-12-24 | 1d? | 24d |  | start no earlier than 2018-12-22 |  |  |  |  |  |
| 172 | 5.7 | [PM]Registrar tiempos y % de realización de tareas en Project |  | 1d? | 2018-12-24 | 2018-12-24 |  | 2018-12-24 | 2018-12-24 | 1d? | 24d |  | start no earlier than 2018-12-22 |  |  |  |  |  |
| 173 | 5.8 | [PM]Comparar la planificación prevista y real en Project hito 2 |  | 1d? | 2018-12-24 | 2018-12-24 |  | 2018-12-24 | 2018-12-24 | 1d? | 24d |  | start no earlier than 2018-12-22 |  |  |  |  |  |
| 174 | 5.9 | [PM]Confeccionar Informes de iteración e informe resumen de Hito 2 |  | 1d? | 2018-12-24 | 2018-12-24 |  | 2018-12-24 | 2018-12-24 | 1d? | 24d |  | start no earlier than 2018-12-22 |  |  |  |  |  |
| 175 | 5.10 | [V1]Sistema de depuración visual in-game de la IA |  | 1d | 2018-12-24 | 2018-12-24 |  | 2018-12-24 | 2018-12-24 | 1d | 24d |  | start no earlier than 2018-12-22 |  |  |  |  |  |
| 176 | 5.11 | [V1]Sistema de distribución central de tiempo de proceso (Scheduling) |  | 1d? | 2018-12-24 | 2018-12-24 |  | 2018-12-24 | 2018-12-24 | 1d? | 24d |  | start no earlier than 2018-12-22 |  |  |  |  |  |
| 177 | 5.12 | [V2]Power-ups y elementos adicionales |  | 1d | 2018-12-24 | 2018-12-24 |  | 2018-12-24 | 2018-12-24 | 1d | 24d |  | start no earlier than 2018-12-22 |  |  |  |  |  |
| 178 | 5.13 | [V2]Integración de librería para GUI |  | 1d | 2018-12-24 | 2018-12-24 |  | 2018-12-24 | 2018-12-24 | 1d | 24d |  | start no earlier than 2018-12-22 |  |  |  |  |  |
| 179 | 5.14 | [V2]Implementación de menús |  | 1d | 2018-12-24 | 2018-12-24 |  | 2018-12-24 | 2018-12-24 | 1d | 24d |  | start no earlier than 2018-12-22 |  |  |  |  |  |
| 180 | 5.15 | [V2]Implementación del HUD |  | 1d | 2018-12-24 | 2018-12-24 |  | 2018-12-24 | 2018-12-24 | 1d | 24d |  | start no earlier than 2018-12-22 |  |  |  |  |  |
| 181 | 5.16 | [PD]Trailer juego/proyecto |  | 1d | 2018-12-24 | 2018-12-24 |  | 2018-12-24 | 2018-12-24 | 1d | 24d |  | start no earlier than 2018-12-22 |  |  |  |  |  |
| 182 | 5.17 | [PD]Making of juego/proyecto |  | 1d | 2018-12-24 | 2018-12-24 |  | 2018-12-24 | 2018-12-24 | 1d | 24d |  | start no earlier than 2018-12-22 |  |  |  |  |  |
| 183 | 5.18 | [RV]Modelado de los personajes |  | 1d | 2018-12-24 | 2018-12-24 |  | 2018-12-24 | 2018-12-24 | 1d | 24d |  | start no earlier than 2018-12-22 |  |  |  |  |  |
| 184 | 5.19 | [RV]Texturizado de los personajes |  | 1d | 2018-12-24 | 2018-12-24 |  | 2018-12-24 | 2018-12-24 | 1d | 24d |  | start no earlier than 2018-12-22 |  |  |  |  |  |
| 185 | 5.20 | [RV]Modelado del entorno y elementos |  | 1d | 2018-12-24 | 2018-12-24 |  | 2018-12-24 | 2018-12-24 | 1d | 24d |  | start no earlier than 2018-12-22 |  |  |  |  |  |
| 186 | 6 | Version Beta del juego, que se pueda jugar | milestone | 0d | 2019-01-14 | 2019-01-14 | 143 | 2019-01-14 | 2019-01-14 | 0d | 80.75d |  | start no earlier than 2018-12-22 |  |  |  |  |  |

| ID | WBS | Task | Type | Duration | Start | Finish | Predecessors | Baseline start | Baseline finish | Baseline duration | Total slack | Free slack | Constraint |
| --- | --- | --- | --- | --- | --- | --- | --- | --- | --- | --- | --- | --- | --- |
| 187 | 7 | **Hito 3** |  | 30d? | 2019-01-24 | 2019-03-06 |  | 2019-01-24 | 2019-03-06 | 30d? | 14d | 0d | finish no later than 2019-03-26 |
| 188 | 7.1 | **Iteracion 9** |  | 1.25d? | 2019-01-25 | 2019-01-28 |  | 2019-01-25 | 2019-01-28 | 1.25d? | 41.75d |  | start no earlier than 2019-01-25 |
| 189 | 7.1.1 | [V2]Diseño e implementación b.objetos (8/10) |  | 7h | 2019-01-25 | 2019-01-25 |  | 2019-01-25 | 2019-01-25 | 7h | 42.12d |  |  |
| 190 | 7.1.2 | [v2]Diseño e implementacion b.componentes 8 |  | 10h | 2019-01-25 | 2019-01-28 |  | 2019-01-25 | 2019-01-28 | 10h | 41.75d |  | start no earlier than 2019-01-07 |
| 191 | 7.1.3 | <Tarea nueva> |  | 1d? | 2019-01-25 | 2019-01-25 |  | 2019-01-25 | 2019-01-25 | 1d? | 42d |  |  |
| 192 | 7.2 | **Iteracion 10** |  | 1.25d? | 2019-02-06 | 2019-02-07 |  | 2019-02-06 | 2019-02-07 | 1.25d? | 33.75d |  | start no earlier than 2019-02-06 |
| 193 | 7.2.1 | [V2]Diseño e implementación b.objetos (9/10) |  | 7h | 2019-02-06 | 2019-02-06 |  | 2019-02-06 | 2019-02-06 | 7h | 34.12d |  |  |
| 194 | 7.2.2 | [v2]Diseño e implementacion b.componentes 9 |  | 10h | 2019-02-06 | 2019-02-07 |  | 2019-02-06 | 2019-02-07 | 10h | 33.75d |  | start no earlier than 2019-01-21 |
| 195 | 7.2.3 | <Tarea nueva> |  | 1d? | 2019-02-06 | 2019-02-06 |  | 2019-02-06 | 2019-02-06 | 1d? | 34d |  |  |
| 196 | 7.3 | **Iteracion 11** |  | 1.25d? | 2019-02-20 | 2019-02-21 |  | 2019-02-20 | 2019-02-21 | 1.25d? | 23.75d |  | start no earlier than 2019-02-20 |
| 197 | 7.3.1 | [V2]Diseño e implementación b.objetos (final) |  | 7h | 2019-02-20 | 2019-02-20 |  | 2019-02-20 | 2019-02-20 | 7h | 24.12d |  |  |
| 198 | 7.3.2 | [v2]Diseño e implementacion b.componentes (final) |  | 10h | 2019-02-20 | 2019-02-21 |  | 2019-02-20 | 2019-02-21 | 10h | 23.75d |  | start no earlier than 2019-02-04 |
| 199 | 7.3.3 | <Tarea nueva> |  | 1d? | 2019-02-20 | 2019-02-20 |  | 2019-02-20 | 2019-02-20 | 1d? | 24d |  |  |
| 200 | 7.4 | **Iteracion 12** |  | 1d? | 2019-03-06 | 2019-03-06 |  | 2019-03-06 | 2019-03-06 | 1d? | 14d |  | start no earlier than 2019-03-06 |
| 201 | 7.4.1 | <Tarea nueva> |  | 1d? | 2019-03-06 | 2019-03-06 |  | 2019-03-06 | 2019-03-06 | 1d? | 14d |  |  |
| 202 | 7.5 | [PM]Detallar plan iteraciones del mes de Febrero-Marzo. Creación Subtareas y precedencias en Project |  | 1d | 2019-01-24 | 2019-01-24 |  | 2019-01-24 | 2019-01-24 | 1d | 43d |  | start no earlier than 2019-01-24 |
| 203 | 7.6 | [PM]Detallar plan iteraciones del mes de Febrero-Marzo Asignar recursos a las tareas en Project |  | 1d? | 2019-01-24 | 2019-01-24 |  | 2019-01-24 | 2019-01-24 | 1d? | 43d |  | start no earlier than 2019-01-24 |
| 204 | 7.7 | [PM]Registrar tiempos y % de realización de tareas en Project |  | 1d? | 2019-01-24 | 2019-01-24 |  | 2019-01-24 | 2019-01-24 | 1d? | 43d |  | start no earlier than 2019-01-24 |
| 205 | 7.8 | [PM]Comparar la planificación prevista y real en Project hito 3 |  | 1d? | 2019-01-24 | 2019-01-24 |  | 2019-01-24 | 2019-01-24 | 1d? | 43d |  | start no earlier than 2019-01-24 |
| 206 | 7.9 | [PM]Confeccionar Informes de iteración e informe resumen de Hito 3 |  | 1d? | 2019-01-24 | 2019-01-24 |  | 2019-01-24 | 2019-01-24 | 1d? | 43d |  | start no earlier than 2019-01-24 |
| 207 | 7.10 | [PM]Elaborar la presentación del Hito 3 |  | 1d? | 2019-01-24 | 2019-01-24 |  | 2019-01-24 | 2019-01-24 | 1d? | 43d |  | start no earlier than 2019-01-24 |
| 208 | 7.11 | [PM]Exponer la presentación del Hito 3 |  | 1d? | 2019-01-24 | 2019-01-24 |  | 2019-01-24 | 2019-01-24 | 1d? | 43d |  | start no earlier than 2019-01-24 |
| 209 | 7.12 | [TAG]Estructura básica del nodo (array de hijos, puntero a padre, puntero a entidad, funcionalidad básica -constructor, destructor, gets, sets, manejo de hijos….) |  | 1d? | 2019-01-24 | 2019-01-24 |  | 2019-01-24 | 2019-01-24 | 1d? | 43d |  | start no earlier than 2019-01-24 |
| 210 | 7.13 | [TAG]Recorrido-dibujado del árbol |  | 1d? | 2019-01-24 | 2019-01-24 |  | 2019-01-24 | 2019-01-24 | 1d? | 43d |  | start no earlier than 2019-01-24 |
| 211 | 7.14 | [TAG]Estructura básica de la entidad (Constructor, destructor, funciones… todas virtuales, vacías) |  | 1d | 2019-01-24 | 2019-01-24 |  | 2019-01-24 | 2019-01-24 | 1d | 43d |  | start no earlier than 2019-01-24 |
| 212 | 7.15 | [TAG]Matrices (model, view, projection) y pila estáticas y su manejo |  | 1d? | 2019-01-24 | 2019-01-24 |  | 2019-01-24 | 2019-01-24 | 1d? | 43d |  | start no earlier than 2019-01-24 |
| 213 | 7.16 | [TAG]Estructura básica de la transformación (Constructor, destructor, matriz transformación…) |  | 1d? | 2019-01-24 | 2019-01-24 |  | 2019-01-24 | 2019-01-24 | 1d? | 43d |  | start no earlier than 2019-01-24 |
| 214 | 7.17 | [TAG]Operaciones de transformación (trasladar, rotar, escalar, identidad, trasponer, invertir, todas con GLM o GLMatrix) |  | 1d? | 2019-01-24 | 2019-01-24 |  | 2019-01-24 | 2019-01-24 | 1d? | 43d |  | start no earlier than 2019-01-24 |
| 215 | 7.18 | [TAG]Dibujado (begindraw, enddraw, manejo pila y matriz model) |  | 1d? | 2019-01-24 | 2019-01-24 |  | 2019-01-24 | 2019-01-24 | 1d? | 43d |  | start no earlier than 2019-01-24 |
| 216 | 7.19 | [TAG]Estructura básica de la cámara (Constructor, destructor, matriz proyección) |  | 1d? | 2019-01-24 | 2019-01-24 |  | 2019-01-24 | 2019-01-24 | 1d? | 43d |  | start no earlier than 2019-01-24 |
| 217 | 7.20 | [TAG]Rellenar matriz perspectiva (con GLM o GLMatrix) |  | 1d | 2019-01-24 | 2019-01-24 |  | 2019-01-24 | 2019-01-24 | 1d | 43d |  | start no earlier than 2019-01-24 |
| 218 | 7.21 | [TAG]Estructura básica de la luz (Constructor, destructor) |  | 1d? | 2019-01-24 | 2019-01-24 |  | 2019-01-24 | 2019-01-24 | 1d? | 43d |  | start no earlier than 2019-01-24 |
| 219 | 7.22 | [TAG]Datos y funciones luz puntual |  | 1d? | 2019-01-24 | 2019-01-24 |  | 2019-01-24 | 2019-01-24 | 1d? | 43d |  | start no earlier than 2019-01-24 |
| 220 | 7.23 | [TAG]Estructura básica de la malla (Constructor, destructor) |  | 1d? | 2019-01-24 | 2019-01-24 |  | 2019-01-24 | 2019-01-24 | 1d? | 43d |  | start no earlier than 2019-01-24 |
| 221 | 7.24 | [TAG]Datos de mallas, texturas, materiales… (llamadas al gestor de recursos) |  | 1d? | 2019-01-24 | 2019-01-24 |  | 2019-01-24 | 2019-01-24 | 1d? | 43d |  | start no earlier than 2019-01-24 |
| 222 | 7.25 | [TAG]Dibujado de mallas (begindraw, enddraw, matriz model…) |  | 1d? | 2019-01-24 | 2019-01-24 |  | 2019-01-24 | 2019-01-24 | 1d? | 43d |  | start no earlier than 2019-01-24 |
| 223 | 7.26 | [TAG]Estructura básica del gestor de recursos (constructor, destructor, vectores de recursos) |  | 1d? | 2019-01-24 | 2019-01-24 |  | 2019-01-24 | 2019-01-24 | 1d? | 43d |  | start no earlier than 2019-01-24 |
| 224 | 7.27 | [TAG]Obtener recurso (gestión adecuada de memoria) |  | 1d? | 2019-01-24 | 2019-01-24 |  | 2019-01-24 | 2019-01-24 | 1d? | 43d |  | start no earlier than 2019-01-24 |
| 225 | 7.28 | [TAG]Estructura básica del recurso (constructor, destructor. Es virtual, vacío) |  | 1d? | 2019-01-24 | 2019-01-24 |  | 2019-01-24 | 2019-01-24 | 1d? | 43d |  | start no earlier than 2019-01-24 |
| 226 | 7.29 | [TAG]Estructura básica de la malla (constructor, destructor) |  | 1d? | 2019-01-24 | 2019-01-24 |  | 2019-01-24 | 2019-01-24 | 1d? | 43d |  | start no earlier than 2019-01-24 |
| 227 | 7.30 | [TAG]Lectura de disco (con assimp) |  | 1d? | 2019-01-24 | 2019-01-24 |  | 2019-01-24 | 2019-01-24 | 1d? | 43d |  | start no earlier than 2019-01-24 |
| 228 | 7.31 | [TAG]Creación de buffers de vértices, normales, índices… y relleno |  | 1d? | 2019-01-24 | 2019-01-24 |  | 2019-01-24 | 2019-01-24 | 1d? | 43d |  | start no earlier than 2019-01-24 |
| 229 | 7.32 | [TAG]Dibujado de las mallas (draw, con paso de los buffers a OpenGL o WebGL) |  | 1d? | 2019-01-24 | 2019-01-24 |  | 2019-01-24 | 2019-01-24 | 1d? | 43d |  | start no earlier than 2019-01-24 |
| 230 | 7.33 | [TAG]Estructura básica del material (constructor, destructor) |  | 1d? | 2019-01-24 | 2019-01-24 |  | 2019-01-24 | 2019-01-24 | 1d? | 43d |  | start no earlier than 2019-01-24 |
| 231 | 7.34 | [TAG]Leer material de disco (con librería o con parser propio) y rellenar valores |  | 1d? | 2019-01-24 | 2019-01-24 |  | 2019-01-24 | 2019-01-24 | 1d? | 43d |  | start no earlier than 2019-01-24 |
| 232 | 7.35 | [TAG]Dibujado de los materiales (preparar los materiales y cargarlos en OpenGL o WebGL) |  | 1d? | 2019-01-24 | 2019-01-24 |  | 2019-01-24 | 2019-01-24 | 1d? | 43d |  | start no earlier than 2019-01-24 |
| 233 | 7.36 | [TAG]Estructura básica del shader (constructor, destructor) |  | 1d? | 2019-01-24 | 2019-01-24 |  | 2019-01-24 | 2019-01-24 | 1d? | 43d |  | start no earlier than 2019-01-24 |
| 234 | 7.37 | [TAG]Lectura de shaders de disco (con parser propio) y guardarlo |  | 1d? | 2019-01-24 | 2019-01-24 |  | 2019-01-24 | 2019-01-24 | 1d? | 43d |  | start no earlier than 2019-01-24 |
| 235 | 7.38 | [TAG]Estructura básica de la interfaz (constructor, destructor, inicialización motor y openGL) |  | 1d? | 2019-01-24 | 2019-01-24 |  | 2019-01-24 | 2019-01-24 | 1d? | 43d |  | start no earlier than 2019-01-24 |
| 236 | 7.39 | [TAG]Funciones para crear cámaras y gestionarlas (manejo de las cámaras, registro, cálculo de la matriz view) |  | 1d? | 2019-01-24 | 2019-01-24 |  | 2019-01-24 | 2019-01-24 | 1d? | 43d |  | start no earlier than 2019-01-24 |
| 237 | 7.40 | [TAG]Funciones para crear luces y gestionarlas (manejo de las luces registro, cálculo de la matriz light) |  | 1d? | 2019-01-24 | 2019-01-24 |  | 2019-01-24 | 2019-01-24 | 1d? | 43d |  | start no earlier than 2019-01-24 |
| 238 | 7.41 | [TAG]Funciones para crear transformaciones (creación de varios nodos con las transformaciones, manejo de las transformaciones) |  | 1d? | 2019-01-24 | 2019-01-24 |  | 2019-01-24 | 2019-01-24 | 1d? | 43d |  | start no earlier than 2019-01-24 |
| 239 | 7.42 | [TAG]Funciones para crear mallas y animaciones |  | 1d? | 2019-01-24 | 2019-01-24 |  | 2019-01-24 | 2019-01-24 | 1d? | 43d |  | start no earlier than 2019-01-24 |
| 240 | 7.43 | [TAG]Funciones para crear shaders y gestionarlos |  | 1d? | 2019-01-24 | 2019-01-24 |  | 2019-01-24 | 2019-01-24 | 1d? | 43d |  | start no earlier than 2019-01-24 |
| 241 | 7.44 | [TAG]Shader básico (Sombreado de Phong, reflexión de Phong) con materiales |  | 1d? | 2019-01-24 | 2019-01-24 |  | 2019-01-24 | 2019-01-24 | 1d? | 43d |  | start no earlier than 2019-01-24 |
| 242 | 7.45 | [TAG]Integración con la aplicación |  | 1d? | 2019-01-24 | 2019-01-24 |  | 2019-01-24 | 2019-01-24 | 1d? | 43d |  | start no earlier than 2019-01-24 |
| 243 | 7.46 | [TAG]Realización de una fachada entre el motor y la aplicación o videojuego |  | 1d? | 2019-01-24 | 2019-01-24 |  | 2019-01-24 | 2019-01-24 | 1d? | 43d |  | start no earlier than 2019-01-24 |
| 244 | 7.47 | [TAG]Librería matemática (GLM o GLMatrix) |  | 1d? | 2019-01-24 | 2019-01-24 |  | 2019-01-24 | 2019-01-24 | 1d? | 43d |  | start no earlier than 2019-01-24 |
| 245 | 7.48 | [TAG][Solo CED] Librería de lectura de mallas (assimp…) |  | 1d? | 2019-01-24 | 2019-01-24 |  | 2019-01-24 | 2019-01-24 | 1d? | 43d |  | start no earlier than 2019-01-24 |
| 246 | 7.49 | [TAG][Solo CED] Librería de ventanas, entrada/salida... (GLFW…) |  | 1d? | 2019-01-24 | 2019-01-24 |  | 2019-01-24 | 2019-01-24 | 1d? | 43d |  | start no earlier than 2019-01-24 |
| 247 | 7.50 | [V1]Flocking: comportamiento grupal emergente |  | 1d | 2019-01-24 | 2019-01-24 |  | 2019-01-24 | 2019-01-24 | 1d | 43d |  | start no earlier than 2019-01-24 |
| 248 | 7.51 | [V1]Editor in-game de parámetros y comportamientos de la IA |  | 1d | 2019-01-24 | 2019-01-24 |  | 2019-01-24 | 2019-01-24 | 1d | 43d |  | start no earlier than 2019-01-24 |
| 249 | 7.52 | [V1]Sistema de logros y puntuaciones web |  | 1d | 2019-01-24 | 2019-01-24 |  | 2019-01-24 | 2019-01-24 | 1d | 43d |  | start no earlier than 2019-01-24 |
| 250 | 7.53 | [V2]Implementación de cesped y vegetación |  | 1d | 2019-01-24 | 2019-01-24 |  | 2019-01-24 | 2019-01-24 | 1d | 43d |  | start no earlier than 2019-01-24 |
| 251 | 7.54 | [V2]Implementación de nubes |  | 1d | 2019-01-24 | 2019-01-24 |  | 2019-01-24 | 2019-01-24 | 1d | 43d |  | start no earlier than 2019-01-24 |
| 252 | 7.55 | [V2]Implementación de sistemas de partículas |  | 1d | 2019-01-24 | 2019-01-24 |  | 2019-01-24 | 2019-01-24 | 1d | 43d |  | start no earlier than 2019-01-24 |
| 253 | 7.56 | [TDS]Resto de la biblioteca (máx. 1/3), cuesheet y metadatos finales |  | 1d | 2019-01-24 | 2019-01-24 |  | 2019-01-24 | 2019-01-24 | 1d | 43d |  | start no earlier than 2019-01-24 |
| 254 | 7.57 | <Tarea nueva> |  | 1d? | 2019-01-24 | 2019-01-24 |  | 2019-01-24 | 2019-01-24 | 1d? | 43d |  | start no earlier than 2019-01-24 |
| 255 | 8 | Versión Producción - Lista para pulir | milestone | 0d | 2019-03-06 | 2019-03-06 | 187 | 2019-03-06 | 2019-03-06 | 0d | 43d |  | start no earlier than 2019-03-06 |

| ID | WBS | Task | Type | Duration | Start | Finish | Predecessors | Baseline start | Baseline finish | Baseline duration | Total slack | Constraint |
| --- | --- | --- | --- | --- | --- | --- | --- | --- | --- | --- | --- | --- |
| 256 | 9 | **hito 4** |  | 29d? | 2019-03-27 | 2019-05-06 |  | 2019-03-27 | 2019-05-06 | 29d? | 0d | finish no later than 2019-05-23 |
| 257 | 9.1 | **Iteracion 13** |  | 1d? | 2019-03-27 | 2019-03-27 |  | 2019-03-27 | 2019-03-27 | 1d? | 28d | start no earlier than 2019-03-27 |
| 258 | 9.1.1 | <Tarea nueva> |  | 1d? | 2019-03-27 | 2019-03-27 |  | 2019-03-27 | 2019-03-27 | 1d? | 28d |  |
| 259 | 9.2 | **Semana santa** |  | 1d? | 2019-04-17 | 2019-04-17 |  | 2019-04-17 | 2019-04-17 | 1d? | 13d | start no earlier than 2019-04-17 |
| 260 | 9.2.1 | <Tarea nueva> |  | 1d? | 2019-04-17 | 2019-04-17 |  | 2019-04-17 | 2019-04-17 | 1d? | 13d |  |
| 261 | 9.3 | **Iteracion 14** |  | 1d? | 2019-05-06 | 2019-05-06 |  | 2019-05-06 | 2019-05-06 | 1d? | 0d | start no earlier than 2019-05-05 |
| 262 | 9.3.1 | <Tarea nueva> |  | 1d? | 2019-05-06 | 2019-05-06 |  | 2019-05-06 | 2019-05-06 | 1d? | 0d |  |
| 263 | 9.4 | [PM]Detallar plan iteraciones del mes de Abril-Mayo. Creación Subtareas y precedencias en Project |  | 1d | 2019-03-27 | 2019-03-27 |  | 2019-03-27 | 2019-03-27 | 1d | 28d | start no earlier than 2019-03-27 |
| 264 | 9.5 | [PM]Detallar plan iteraciones del mes de Abril-Mayo. Asignar recursos a las tareas en Project |  | 1d? | 2019-03-27 | 2019-03-27 |  | 2019-03-27 | 2019-03-27 | 1d? | 28d | start no earlier than 2019-03-27 |
| 265 | 9.6 | [PM]Registrar tiempos y % de realización de tareas en Project |  | 1d? | 2019-03-27 | 2019-03-27 |  | 2019-03-27 | 2019-03-27 | 1d? | 28d | start no earlier than 2019-03-27 |
| 266 | 9.7 | [PM]Comparar la planificación prevista y real en Project hito 4 |  | 1d? | 2019-03-27 | 2019-03-27 |  | 2019-03-27 | 2019-03-27 | 1d? | 28d | start no earlier than 2019-03-27 |
| 267 | 9.8 | [PM]Confeccionar Informes de iteración e informe resumen de Hito 4 |  | 1d? | 2019-03-27 | 2019-03-27 |  | 2019-03-27 | 2019-03-27 | 1d? | 28d | start no earlier than 2019-03-27 |
| 268 | 9.9 | [PM]Elaborar la presentación del Hito 4 |  | 1d? | 2019-03-27 | 2019-03-27 |  | 2019-03-27 | 2019-03-27 | 1d? | 28d | start no earlier than 2019-03-27 |
| 269 | 9.10 | [PM]Exponer la presentación del Hito 4 |  | 1d? | 2019-03-27 | 2019-03-27 |  | 2019-03-27 | 2019-03-27 | 1d? | 28d | start no earlier than 2019-03-27 |
| 270 | 9.11 | [TAG]Estructura básica de la animación (Constructor, destructor) |  | 1d | 2019-03-27 | 2019-03-27 |  | 2019-03-27 | 2019-03-27 | 1d | 28d | start no earlier than 2019-03-27 |
| 271 | 9.12 | [TAG]Datos de animaciones, mallas, texturas, materiales (multiples, con llamadas al gestor de recursos) |  | 1d? | 2019-03-27 | 2019-03-27 |  | 2019-03-27 | 2019-03-27 | 1d? | 28d | start no earlier than 2019-03-27 |
| 272 | 9.13 | [TAG]Dibujado de texturas (preparar las texturas y cargarlas en OpenGL o WebGL) |  | 1d? | 2019-03-27 | 2019-03-27 |  | 2019-03-27 | 2019-03-27 | 1d? | 28d | start no earlier than 2019-03-27 |
| 273 | 9.14 | [TAG]Shader básico (Sombreado de Phong, reflexión de Phong) con materiales y texturas |  | 1d? | 2019-03-27 | 2019-03-27 |  | 2019-03-27 | 2019-03-27 | 1d? | 28d | start no earlier than 2019-03-27 |
| 274 | 9.15 | [TAG]Shader Cartoon |  | 1d? | 2019-03-27 | 2019-03-27 |  | 2019-03-27 | 2019-03-27 | 1d? | 28d | start no earlier than 2019-03-27 |
| 275 | 9.16 | [TAG]Bounding boxes (incluye retocar nodos, entidades y recursos malla) |  | 1d? | 2019-03-27 | 2019-03-27 |  | 2019-03-27 | 2019-03-27 | 1d? | 28d | start no earlier than 2019-03-27 |
| 276 | 9.17 | [TAG]Backface culling |  | 1d? | 2019-03-27 | 2019-03-27 |  | 2019-03-27 | 2019-03-27 | 1d? | 28d | start no earlier than 2019-03-27 |
| 277 | 9.18 | [TAG]Frustum culling |  | 1d? | 2019-03-27 | 2019-03-27 |  | 2019-03-27 | 2019-03-27 | 1d? | 28d | start no earlier than 2019-03-27 |
| 278 | 9.19 | [TAG]Sombras proyectadas |  | 1d? | 2019-03-27 | 2019-03-27 |  | 2019-03-27 | 2019-03-27 | 1d? | 28d | start no earlier than 2019-03-27 |
| 279 | 9.20 | [TAG]Sistema de partículas (sólo la incorporación en el motor) |  | 1d? | 2019-03-27 | 2019-03-27 |  | 2019-03-27 | 2019-03-27 | 1d? | 28d | start no earlier than 2019-03-27 |
| 280 | 9.21 | [PD]Créditos |  | 1d | 2019-03-27 | 2019-03-27 |  | 2019-03-27 | 2019-03-27 | 1d | 28d | start no earlier than 2019-03-27 |
| 281 | 9.22 | [PD]Vídeo final juego / explicación parte del proyecto |  | 1d | 2019-03-27 | 2019-03-27 |  | 2019-03-27 | 2019-03-27 | 1d | 28d | start no earlier than 2019-03-27 |
| 282 | 9.23 | [TDS]Integración de sonido y música en el juego |  | 1d | 2019-03-27 | 2019-03-27 |  | 2019-03-27 | 2019-03-27 | 1d | 28d | start no earlier than 2019-03-27 |
| 283 | 9.24 | [TDS]Post producción (mezcla y masterización in-game) |  | 1d | 2019-03-27 | 2019-03-27 |  | 2019-03-27 | 2019-03-27 | 1d | 28d | start no earlier than 2019-03-27 |
| 284 | 9.25 | [TDS]Sonido generado proceduralmente in-game |  | 1d | 2019-03-27 | 2019-03-27 |  | 2019-03-27 | 2019-03-27 | 1d | 28d | start no earlier than 2019-03-27 |
| 285 | 9.26 | [RV]Rigging de los personajes |  | 1d | 2019-03-27 | 2019-03-27 |  | 2019-03-27 | 2019-03-27 | 1d | 28d | start no earlier than 2019-03-27 |
| 286 | 9.27 | [RV]Captura de movimiento |  | 1d | 2019-03-27 | 2019-03-27 |  | 2019-03-27 | 2019-03-27 | 1d | 28d | start no earlier than 2019-03-27 |
| 287 | 9.28 | [RV]Animación de los personajes |  | 1d | 2019-03-27 | 2019-03-27 |  | 2019-03-27 | 2019-03-27 | 1d | 28d | start no earlier than 2019-03-27 |
| 288 | 9.29 | [RV]Texturizado del entorno y elementos |  | 1d | 2019-03-27 | 2019-03-27 |  | 2019-03-27 | 2019-03-27 | 1d | 28d | start no earlier than 2019-03-27 |
| 289 | 10 | Version terminada | milestone | 0d | 2019-05-06 | 2019-05-06 | 256 | 2019-05-06 | 2019-05-06 | 0d | 0d | start no earlier than 2018-10-24 |
